# caAERS-Version1.5-ProjectSchedule-baseline1

Schedule from MS Project, 2008-03-06 to 2008-09-25, costs in $, A marks actual dates.

## Calendars

- Standard: Mon-Fri 08:00-12:00, 13:00-17:00; Sat-Sun off. Exceptions (off unless hours are given): 2008-09-01.

## Resources

| Resource | Group | Cost per use |
| --- | --- | --- |
| Product Dir | PM | 150 |
| Product Mgr | PM | 130 |
| Arch1-VK | Arch | 142.5 |
| Arch2-RC | Arch | 142.5 |
| Sr Dev1-SA | Sr Dev | 128.25 |
| Sr Dev2-BJ | Sr Dev | 118.75 |
| Dev1-MD | Dev | 99.75 |
| Dev2-SS | Dev | 99.75 |
| Dev3-AK | Dev | 99.75 |
| Analyst | Analyst | 99.75 |
| UI | UI Designer | 85 |
| Writer | Sr Tech Writer | 99.75 |
| Admin | Admin | 70 |
| QA Eng | Sr QA | 94.5 |
| Usability Eng | Usability Eng | 85 |
| CALGB |  |  |
| WFU |  |  |
| Mayo |  |  |
| All |  |  |

## Schedule

| ID | WBS | Task | Type | Duration | Start | Finish | Predecessors | Complete | Remaining | Baseline start | Baseline finish | Baseline duration | Total slack | Constraint | Resources | Work | Actual work | Cost | Baseline cost | Actual cost |
| --- | --- | --- | --- | --- | --- | --- | --- | --- | --- | --- | --- | --- | --- | --- | --- | --- | --- | --- | --- | --- |
| 1 | 1 | **caAERS v1.5** |  | 145d | 2008-03-06 A | 2008-09-25 |  | 3% | 140d | 2008-03-06 | 2008-09-25 | 145d | 0d |  |  | 13490h | 488h | 9,687.86 | 1,415,786.26 | 1,748.06 |
| 2 | 1.1 | Project Start Date | milestone | 0d | 2008-03-06 | 2008-03-06 |  |  |  | 2008-03-06 | 2008-03-06 | 0d | 0d | must start on 2008-03-06 |  |  |  |  |  |  |
| 3 | 1.2 | **Elaboration** |  | 47d | 2008-03-07 A | 2008-05-12 |  | 14% | 40.49d | 2008-03-07 | 2008-05-12 | 47d | 97d |  |  | 3434h | 488h | 4,075.74 | 362,839.58 | 1,748.06 |
| 4 | 1.2.1 | **Iteration 1 (March)** |  | 39d | 2008-03-07 A | 2008-04-30 |  | 34% | 25.87d | 2008-03-07 | 2008-04-30 | 39d | 105d |  |  | 1476h | 488h | 2,960.12 | 156,495.64 | 1,748.06 |
| 5 | 1.2.1.1 | **Project Management** |  | 39d | 2008-03-07 A | 2008-04-30 |  | 6% | 36.47d | 2008-03-07 | 2008-04-30 | 39d | 105d |  |  | 243.5h | 64h | 498.09 | 32,678.09 | 78.97 |
| 6 | 1.2.1.1.1 | Iteration Planning |  | 0.67d | 2008-03-07 | 2008-03-07 |  |  |  | 2008-03-07 | 2008-03-07 | 0.67d | 143.33d |  | Product Mgr [37.5%] | 2h |  | 48.75 | 308.75 |  |
| 7 | 1.2.1.1.2 | Prepare PMP Plan (1.1) |  | 17d | 2008-03-07 | 2008-03-31 |  |  |  | 2008-03-07 | 2008-03-31 | 17d | 127d | start no earlier than 2008-03-07 | Product Mgr [43.8%] | 37h |  | 56.88 | 4,866.88 |  |
| 8 | 1.2.1.1.3 | **Monthly Status Report Template (1.2)** |  | 1d | 2008-03-07 | 2008-03-07 |  |  |  | 2008-03-07 | 2008-03-07 | 1d | 143d |  |  |  |  | 65 | 65 |  |
| 9 | 1.2.1.1.3.1 | Prepare monthly status template | milestone | 0d | 2008-03-07 | 2008-03-07 |  |  |  | 2008-03-07 | 2008-03-07 | 0d | 143d |  | Product Mgr [25%] |  |  | 32.5 | 32.5 |  |
| 10 | 1.2.1.1.3.2 | Prepare monthly financial report template | milestone | 0d | 2008-03-07 | 2008-03-07 |  |  |  | 2008-03-07 | 2008-03-07 | 0d | 143d |  | Product Mgr [25%] |  |  | 32.5 | 32.5 |  |
| 11 | 1.2.1.1.4 | Daily Team Status and Planning Meetings |  | 17d | 2008-03-07 A | 2008-03-31 |  | 63% | 6.33d | 2008-03-07 | 2008-03-31 | 17d | 127d |  | Product Mgr [12.5%]; Arch2-RC [12.5%]; Arch1-VK [12.5%]; Sr Dev2-BJ [12.5%]; Sr Dev1-SA [12.5%]; Dev3-AK [12.5%]; Dev1-MD [12.5%]; Dev2-SS [50%]; Analyst [12.5%]; QA Eng [12.5%] | 105h | 64h | 181.84 | 13,266.84 | 78.97 |
| 12 | 1.2.1.1.5 | Resource Management |  | 36d | 2008-03-07 | 2008-04-30 |  |  |  | 2008-03-07 | 2008-04-30 | 36d | 105d |  | Product Dir [12.5%] | 22h |  | 18.75 | 3,318.75 |  |
| 13 | 1.2.1.1.6 | Project Control |  | 14d | 2008-03-07 | 2008-03-31 |  |  |  | 2008-03-07 | 2008-03-31 | 14d | 127d |  | Product Mgr [25%] | 26h |  | 32.5 | 3,412.5 |  |
| 14 | 1.2.1.1.7 | Adopter Management |  | 15d | 2008-03-07 | 2008-03-31 |  |  |  | 2008-03-07 | 2008-03-31 | 15d | 127d |  | Product Mgr [12.5%] | 10.5h |  | 16.25 | 1,381.25 |  |
| 15 | 1.2.1.1.8 | Stakeholder Management |  | 16d | 2008-03-07 | 2008-03-31 |  |  |  | 2008-03-07 | 2008-03-31 | 16d | 127d |  | Product Dir [12.5%] | 9h |  | 18.75 | 1,368.75 |  |
| 16 | 1.2.1.1.9 | Elaborators Meeting |  | 39d | 2008-03-07 | 2008-04-30 |  |  |  | 2008-03-07 | 2008-04-30 | 39d | 105d |  | Product Dir [12.5%] | 23.5h |  | 18.75 | 3,543.75 |  |
| 17 | 1.2.1.1.10 | Risk Management |  | 10d | 2008-03-07 | 2008-03-31 |  |  |  | 2008-03-07 | 2008-03-31 | 10d | 127d |  | Product Mgr [31.2%] | 8.5h |  | 40.62 | 1,145.62 |  |
| 18 | 1.2.1.2 | **Administration** |  | 17d | 2008-03-07 | 2008-03-31 |  |  |  | 2008-03-07 | 2008-03-31 | 17d | 127d |  |  | 26h |  | 17.5 | 1,837.5 |  |
| 19 | 1.2.1.2.1 | Contracts Management |  | 12d | 2008-03-07 | 2008-03-31 |  |  |  | 2008-03-07 | 2008-03-31 | 12d | 127d |  | Admin [12.5%] | 12h |  | 8.75 | 848.75 |  |
| 20 | 1.2.1.2.2 | Timesheet Management |  | 14d | 2008-03-07 | 2008-03-31 |  |  |  | 2008-03-07 | 2008-03-31 | 14d | 127d |  | Admin [12.5%] | 14h |  | 8.75 | 988.75 |  |
| 21 | 1.2.1.3 | **caAERS Vision and Scope Document (1.3)** |  | 17d | 2008-03-07 A | 2008-03-31 |  | 33% | 11.46d | 2008-03-07 | 2008-03-31 | 17d | 127d |  |  | 92.5h | 14h | 145.78 | 7,635.72 | 117.66 |
| 22 | 1.2.1.3.1 | Stakeholder meeting to discuss Vision and Scope |  | 6d | 2008-03-07 A | 2008-03-14 |  | 4% | 5.79d | 2008-03-07 | 2008-03-14 | 6d | 138d | start no earlier than 2008-03-07 | Product Dir [18.8%]; Analyst [25%]; Mayo [50%]; CALGB [50%]; WFU [50%]; Arch2-RC [12.5%] | 25.5h | 3h | 70.88 | 2,092.01 | 42.75 |
| 23 | 1.2.1.3.2 | Create Vision and Scope Draft |  | 5d | 2008-03-07 A | 2008-03-20 A |  | 100% |  | 2008-03-07 | 2008-03-20 | 5d |  |  | Product Dir [25%]; Analyst [37.5%] | 11h | 11h | 74.91 | 1,229.91 | 74.91 |
| 24 | 1.2.1.3.3 | Review by stakeholders |  | 5d | 2008-03-21 | 2008-03-31 | 23 |  |  | 2008-03-21 | 2008-03-31 | 5d | 127d |  | CALGB [68.8%]; Mayo [62.5%]; WFU [62.5%] | 56h |  |  | 4,313.81 |  |

| ID | WBS | Task | Type | Duration | Start | Finish | Complete | Remaining | Baseline start | Baseline finish | Baseline duration | Total slack | Resources | Work | Actual work | Cost | Baseline cost | Actual cost |
| --- | --- | --- | --- | --- | --- | --- | --- | --- | --- | --- | --- | --- | --- | --- | --- | --- | --- | --- |
| 25 | 1.2.1.4 | **Task 1: Service Specification and Code Base Refactoring** |  | 18.5d | 2008-03-07 A | 2008-04-02 | 88% | 2.31d | 2008-03-07 | 2008-03-31 | 17d | 125.5d |  | 56h | 55h | 213.75 | 5,638.75 | 213.75 |
| 26 | 1.2.1.4.1 | Review CAT processes and recommendations |  | 15.5d | 2008-03-07 A | 2008-03-28 | 94% | 1d | 2008-03-07 | 2008-03-24 | 10d | 128.5d | Arch1-VK [12.5%]; Arch2-RC [12.5%]; Sr Dev2-BJ [25%] | 24h | 23h | 65.31 | 2,365.31 | 65.31 |
| 27 | 1.2.1.4.2 | Identify targets for refactoring as services |  | 15.5d | 2008-03-07 A | 2008-04-02 A | 100% |  | 2008-03-07 | 2008-03-27 | 11d |  | Arch1-VK [12.5%]; Arch2-RC [12.5%]; Sr Dev2-BJ [25%] | 24h | 24h | 65.31 | 2,140.31 | 65.31 |
| 28 | 1.2.1.4.3 | Prepare candidate Service Decomposition (CFM) |  | 5d | 2008-03-07 A | 2008-03-31 A | 100% |  | 2008-03-07 | 2008-03-31 | 5d |  | Arch1-VK [12.5%]; Arch2-RC [25%]; Sr Dev2-BJ [25%] | 8h | 8h | 83.12 | 1,133.12 | 83.12 |
| 29 | 1.2.1.4.4 | Refactoring to prepare for SOA migration |  | 4d | 2008-03-07 | 2008-03-12 |  |  | 2008-03-07 | 2008-03-12 | 4d | 140d |  |  |  |  |  |  |
| 30 | 1.2.1.5 | **Task 2: caAERS Development** |  | 19d | 2008-03-07 A | 2008-04-02 | 54% | 8.78d | 2008-03-07 | 2008-03-31 | 17d | 125d |  | 241h | 74h | 268.38 | 21,380.12 | 268.38 |
| 31 | 1.2.1.5.1 | Requirements Gathering for caAERS New Development |  | 19d | 2008-03-07 A | 2008-04-02 | 17% | 15.71d | 2008-03-07 | 2008-03-31 | 17d | 125d | CALGB [75%]; WFU [62.5%]; Mayo [75%]; Analyst [62.5%]; Arch1-VK [12.5%] | 208h | 41h | 80.16 | 17,416.91 | 80.16 |
| 32 | 1.2.1.5.2 | Begin Design Process for caAERS New Development |  | 8d | 2008-03-07 A | 2008-03-31 A | 100% |  | 2008-03-07 | 2008-03-31 | 4d |  | Sr Dev2-BJ [12.5%]; Sr Dev1-SA [50%]; Arch1-VK [12.5%] | 18h | 18h | 96.78 | 1,966.78 | 96.78 |
| 33 | 1.2.1.5.3 | caAERS Refactoring to prepare for new dev |  | 5d | 2008-03-07 A | 2008-03-31 A | 100% |  | 2008-03-07 | 2008-03-31 | 5d |  | Sr Dev2-BJ [50%] | 12h | 12h | 59.38 | 1,559.38 | 59.38 |
| 34 | 1.2.1.5.4 | caaers Rules refactoring |  | 2d | 2008-03-07 A | 2008-03-26 A | 100% |  | 2008-03-07 | 2008-03-26 | 2d |  | Sr Dev1-SA [25%] | 3h | 3h | 32.06 | 437.06 | 32.06 |
| 35 | 1.2.1.6 | **Task 3: caAERS Adoption** |  | 17d | 2008-03-07 A | 2008-03-31 | 13% | 14.75d | 2008-03-07 | 2008-03-31 | 17d | 127d |  | 175h | 11h | 326.31 | 13,665.14 | 32.06 |
| 36 | 1.2.1.6.1 | Active adoption at sites (I1) |  | 17d | 2008-03-07 A | 2008-03-31 | 26% | 12.5d | 2008-03-07 | 2008-03-31 | 17d | 127d | Sr Dev1-SA [25%]; Sr Dev2-BJ; QA Eng [50%]; Mayo [25%]; WFU [25%]; CALGB [6.2%] | 61h | 11h | 198.06 | 5,177.21 | 32.06 |
| 37 | 1.2.1.6.2 | Create data sharing and Adoption plan (I1) |  | 17d | 2008-03-07 | 2008-03-31 |  |  | 2008-03-07 | 2008-03-31 | 17d | 127d | Mayo [50%]; WFU [50%]; CALGB [25%] | 114h |  |  | 8,359.68 |  |
| 38 | 1.2.1.6.3 | Grid Service Setup | milestone | 0d | 2008-03-07 | 2008-03-07 |  |  | 2008-03-07 | 2008-03-07 | 0d | 143d | Sr Dev1-SA |  |  | 128.25 | 128.25 |  |
| 39 | 1.2.1.7 | **Task 4: Production Support** |  | 17d | 2008-03-07 A | 2008-03-31 | 54% | 7.85d | 2008-03-07 | 2008-03-31 | 17d | 127d |  | 394.5h | 76h | 463.12 | 44,213.12 | 116.38 |
| 40 | 1.2.1.7.1 | Maintain caAERS instances at Adopter Sites | milestone | 0d | 2008-03-07 | 2008-03-07 |  |  | 2008-03-07 | 2008-03-07 | 0d | 143d | Mayo [6.2%]; WFU [6.2%] |  |  |  |  |  |
| 41 | 1.2.1.7.2 | Technical Support and Consultation |  | 17d | 2008-03-07 A | 2008-03-31 | 79% | 3.5d | 2008-03-07 | 2008-03-31 | 17d | 127d | Sr Dev2-BJ [25%]; Sr Dev1-SA [12.5%]; Dev1-MD [5%]; Dev3-AK [5%]; Dev2-SS [5%]; QA Eng [25%]; Arch1-VK [6.2%]; Arch2-RC [6.2%] | 53.5h | 43h | 102.12 | 7,237.12 | 54.62 |
| 42 | 1.2.1.7.3 | Bug Fixes (I1) |  | 17d | 2008-03-07 A | 2008-03-31 | 28% | 12.21d | 2008-03-07 | 2008-03-31 | 17d | 127d | Sr Dev2-BJ [25%]; Sr Dev1-SA [25%]; Dev1-MD; Dev2-SS; Dev3-AK | 341h | 33h | 361 | 36,976 | 61.75 |
| 43 | 1.2.1.8 | **Task 5: NCI Enterprise AE Analysis** |  | 17d | 2008-03-07 A | 2008-03-31 | 88% | 1.96d | 2008-03-07 | 2008-03-31 | 17d | 127d |  | 29.5h | 24h | 210.28 | 3,690.28 | 210.28 |
| 44 | 1.2.1.8.1 | Initial Enterprise AE Meeting |  | 2d | 2008-03-07 A | 2008-03-24 A | 100% |  | 2008-03-07 | 2008-03-24 | 2d |  | Product Dir [25%]; Arch2-RC [12.5%]; Analyst [87.5%] | 8h | 8h | 142.59 | 1,027.59 | 142.59 |
| 45 | 1.2.1.8.2 | Review Existing materials and documents |  | 11d | 2008-03-07 A | 2008-03-31 | 86% | 1.5d | 2008-03-07 | 2008-03-31 | 11d | 127d | Analyst [50%]; Arch2-RC [12.5%] | 21.5h | 16h | 67.69 | 2,662.69 | 67.69 |
| 46 | 1.2.1.9 | **Environment & Configuration Management** |  | 18d | 2008-03-07 A | 2008-04-01 | 83% | 3d | 2008-03-07 | 2008-03-28 | 16d | 126d |  | 166h | 153h | 654.53 | 20,299.53 | 607.28 |
| 47 | 1.2.1.9.1 | Continuous Build Server Migration |  | 5d | 2008-03-07 A | 2008-03-13 A | 100% |  | 2008-03-07 | 2008-03-13 | 5d |  | Sr Dev1-SA [75%] | 21h | 21h | 96.19 | 2,931.19 | 96.19 |
| 48 | 1.2.1.9.2 | Ivy Migration |  | 16d | 2008-03-07 A | 2008-04-01 | 72% | 4.5d | 2008-03-07 | 2008-03-28 | 14d | 126d | Sr Dev2-BJ [75%]; Sr Dev1-SA [75%]; QA Eng [12.5%]; Arch1-VK [12.5%] | 80h | 72h | 214.88 | 9,754.88 | 203.06 |
| 49 | 1.2.1.9.3 | Ant |  | 6d | 2008-03-07 A | 2008-03-24 A | 100% |  | 2008-03-07 | 2008-03-24 | 6d |  | Sr Dev2-BJ [25%]; Sr Dev1-SA [75%]; QA Eng [25%]; Arch1-VK [25%] | 21h | 21h | 185.12 | 2,835.12 | 185.12 |
| 50 | 1.2.1.9.4 | Set up cobertura |  | 2d | 2008-03-07 | 2008-03-28 |  |  | 2008-03-07 | 2008-03-28 | 2d | 128d | QA Eng [37.5%] | 5h |  | 35.44 | 560.44 |  |
| 51 | 1.2.1.9.5 | Set up Wiki |  | 15d | 2008-03-07 A | 2008-03-28 A | 100% |  | 2008-03-07 | 2008-03-28 | 15d |  | Analyst [87.5%]; Arch2-RC [25%] | 39h | 39h | 122.91 | 4,217.91 | 122.91 |
| 52 | 1.2.1.9.6 | caAERS DEMO Server Support |  | 1d | 2008-03-07 | 2008-03-07 |  |  | 2008-03-07 | 2008-03-07 | 1d | 143d |  |  |  |  |  |  |

| ID | WBS | Task | Type | Duration | Start | Finish | Complete | Remaining | Baseline start | Baseline finish | Baseline duration | Total slack | Constraint | Resources | Work | Actual work | Cost | Baseline cost | Actual cost |
| --- | --- | --- | --- | --- | --- | --- | --- | --- | --- | --- | --- | --- | --- | --- | --- | --- | --- | --- | --- |
| 53 | 1.2.1.10 | **Testing** |  | 17d | 2008-03-07 A | 2008-03-31 | 3% | 16.47d | 2008-03-07 | 2008-03-31 | 17d | 127d |  |  | 38h | 3h | 112.5 | 3,937.5 | 53.44 |
| 54 | 1.2.1.10.1 | Prepare Test Plan |  | 8d | 2008-03-07 A | 2008-03-31 | 9% | 7.25d | 2008-03-07 | 2008-03-31 | 8d | 127d |  | QA Eng [25%]; Arch2-RC [12.5%]; Arch1-VK [25%] | 11h | 3h | 77.06 | 1,067.06 | 53.44 |
| 55 | 1.2.1.10.2 | Testing |  | 16d | 2008-03-07 | 2008-03-31 |  |  | 2008-03-07 | 2008-03-31 | 16d | 127d |  | QA Eng [37.5%] | 27h |  | 35.44 | 2,870.44 |  |
| 56 | 1.2.1.11 | **Documentation** |  | 15d | 2008-03-10 A | 2008-03-28 A | 100% |  | 2008-03-10 | 2008-03-28 | 15d |  |  |  | 14h | 14h | 49.88 | 1,519.88 | 49.88 |
| 57 | 1.2.1.11.1 | Document Updates |  | 5d | 2008-03-10 A | 2008-03-28 A | 100% |  | 2008-03-10 | 2008-03-28 | 5d |  | start no earlier than 2008-03-10 | Analyst [50%] | 14h | 14h | 49.88 | 1,519.88 | 49.88 |
| 58 | 1.2.1.12 | **Deliverables** |  | 1d | 2008-03-31 | 2008-03-31 |  |  | 2008-03-31 | 2008-03-31 | 1d | 1d |  |  |  |  |  |  |  |
| 59 | 1.2.1.12.1 | Submit Project Management Plan (1.1) | milestone | 0d | 2008-03-31 | 2008-03-31 |  |  | 2008-03-31 | 2008-03-31 | 0d | 0d | must finish on 2008-03-31 |  |  |  |  |  |  |
| 60 | 1.2.1.12.2 | Submit Status Report Templates (1.2) | milestone | 0d | 2008-03-31 | 2008-03-31 |  |  | 2008-03-31 | 2008-03-31 | 0d | 128d | start no earlier than 2008-03-31 |  |  |  |  |  |  |
| 61 | 1.2.1.12.3 | Submit Risk Management Plan | milestone | 0d | 2008-03-31 | 2008-03-31 |  |  | 2008-03-31 | 2008-03-31 | 0d | 0d | must finish on 2008-03-31 |  |  |  |  |  |  |
| 62 | 1.2.1.12.4 | Submit Vision and Scope Document (1.3) | milestone | 0d | 2008-03-31 | 2008-03-31 |  |  | 2008-03-31 | 2008-03-31 | 0d | 0d | must finish on 2008-03-31 |  |  |  |  |  |  |
| 63 | 1.2.1.12.5 | Submit Master Test Plan | milestone | 0d | 2008-03-31 | 2008-03-31 |  |  | 2008-03-31 | 2008-03-31 | 0d | 0d | must finish on 2008-03-31 |  |  |  |  |  |  |
| 64 | 1.2.2 | **Iteration 2 (April)** |  | 30d | 2008-04-01 | 2008-05-12 |  |  | 2008-04-01 | 2008-05-12 | 30d | 11d | start no earlier than 2008-04-01 |  | 1958h |  | 1,115.62 | 206,343.95 |  |
| 65 | 1.2.2.1 | **Project Management** |  | 30d | 2008-04-01 | 2008-05-12 |  |  | 2008-04-01 | 2008-05-12 | 30d | 97d |  |  | 132h |  | 131.25 | 17,511.25 |  |
| 66 | 1.2.2.1.1 | Update PMP |  | 22d | 2008-04-01 | 2008-04-30 |  |  | 2008-04-01 | 2008-04-30 | 22d | 105d | start no earlier than 2008-03-07 | Product Mgr [12.5%] | 11.5h |  | 16.25 | 1,511.25 |  |
| 67 | 1.2.2.1.2 | Status Meetings |  | 22d | 2008-04-01 | 2008-04-30 |  |  | 2008-04-01 | 2008-04-30 | 22d | 105d |  | Product Mgr [12.5%] | 22h |  | 16.25 | 2,876.25 |  |
| 68 | 1.2.2.1.3 | Project Control |  | 30d | 2008-04-01 | 2008-05-12 |  |  | 2008-04-01 | 2008-05-12 | 30d | 97d | start no earlier than 2008-03-20 | Product Mgr [25%] | 41h |  | 32.5 | 5,362.5 |  |
| 69 | 1.2.2.1.4 | Adopter Management |  | 22d | 2008-04-01 | 2008-04-30 |  |  | 2008-04-01 | 2008-04-30 | 22d | 105d |  | Product Mgr [6.2%] | 11h |  | 8.12 | 1,438.12 |  |
| 70 | 1.2.2.1.5 | Stakeholder Management |  | 22d | 2008-04-01 | 2008-04-30 |  |  | 2008-04-01 | 2008-04-30 | 22d | 105d |  | Product Dir [6.2%] | 11h |  | 9.38 | 1,659.38 |  |
| 71 | 1.2.2.1.6 | Elaborators Meeting |  | 22d | 2008-04-01 | 2008-04-30 |  |  | 2008-04-01 | 2008-04-30 | 22d | 105d |  | Product Mgr [25%] | 24h |  | 32.5 | 3,152.5 |  |
| 72 | 1.2.2.1.7 | Risk Management |  | 22d | 2008-04-01 | 2008-04-30 |  |  | 2008-04-01 | 2008-04-30 | 22d | 105d |  | Product Mgr [12.5%] | 11.5h |  | 16.25 | 1,511.25 |  |
| 73 | 1.2.2.2 | **Admin** |  | 22d | 2008-04-01 | 2008-04-30 |  |  | 2008-04-01 | 2008-04-30 | 22d | 105d |  |  | 44h |  | 17.5 | 3,097.5 |  |
| 74 | 1.2.2.2.1 | Contracts Management |  | 22d | 2008-04-01 | 2008-04-30 |  |  | 2008-04-01 | 2008-04-30 | 22d | 105d |  | Admin [12.5%] | 22h |  | 8.75 | 1,548.75 |  |
| 75 | 1.2.2.2.2 | Timesheet Management |  | 22d | 2008-04-01 | 2008-04-30 |  |  | 2008-04-01 | 2008-04-30 | 22d | 105d |  | Admin [12.5%] | 22h |  | 8.75 | 1,548.75 |  |
| 76 | 1.2.2.3 | **Task 1: Service Specification and Code Base Refactoring** |  | 22d | 2008-04-01 | 2008-04-30 |  |  | 2008-04-01 | 2008-04-30 | 22d | 105d |  |  | 253h |  | 174.56 | 32,514.56 |  |
| 77 | 1.2.2.3.1 | Develop Service Specifications |  | 22d | 2008-04-01 | 2008-04-30 |  |  | 2008-04-01 | 2008-04-30 | 22d | 105d |  | Sr Dev2-BJ [12.5%]; Arch1-VK [12.5%]; Arch2-RC [12.5%]; Sr Dev1-SA [12.5%] | 88h |  | 66.5 | 12,386.5 |  |
| 78 | 1.2.2.3.2 | Refactoring to prepare for service migration |  | 22d | 2008-04-01 | 2008-04-30 |  |  | 2008-04-01 | 2008-04-30 | 22d | 105d |  | Sr Dev1-SA [25%]; Sr Dev2-BJ [25%]; Arch1-VK [6.2%]; Dev1-MD [12.5%]; Dev2-SS [12.5%]; Dev3-AK [12.5%] | 165h |  | 108.06 | 20,128.06 |  |

| ID | WBS | Task | Duration | Start | Finish | Predecessors | Baseline start | Baseline finish | Baseline duration | Total slack | Free slack | Resources | Work | Cost | Baseline cost |
| --- | --- | --- | --- | --- | --- | --- | --- | --- | --- | --- | --- | --- | --- | --- | --- |
| 79 | 1.2.2.4 | **Task 2: caAERS Development** | 22d | 2008-04-01 | 2008-04-30 |  | 2008-04-01 | 2008-04-30 | 22d | 105d |  |  | 654h | 219.09 | 65,010.34 |
| 80 | 1.2.2.4.1 | Develop Requirements for new Development (I2) | 22d | 2008-04-01 | 2008-04-30 |  | 2008-04-01 | 2008-04-30 | 22d | 105d |  | Mayo [25%]; WFU [37.5%]; CALGB [25%]; Analyst [25%]; Arch1-VK [3.1%]; Arch2-RC [6.2%] | 198.5h | 38.3 | 17,383.28 |
| 81 | 1.2.2.4.2 | Develop Use Cases | 22d | 2008-04-01 | 2008-04-30 |  | 2008-04-01 | 2008-04-30 | 22d | 105d |  | Mayo [25%]; WFU [37.5%]; CALGB [50%]; Analyst [25%]; Arch1-VK [3.1%]; Arch2-RC [6.2%] | 235.5h | 38.3 | 21,084.57 |
| 82 | 1.2.2.4.3 | Create Design Documents for caAERS | 22d | 2008-04-01 | 2008-04-30 |  | 2008-04-01 | 2008-04-30 | 22d | 105d |  | Sr Dev2-BJ [12.5%]; Sr Dev1-SA [12.5%] | 44h | 30.88 | 5,750.88 |
| 83 | 1.2.2.4.4 | Refactoring for caAERS development | 22d | 2008-04-01 | 2008-04-30 |  | 2008-04-01 | 2008-04-30 | 22d | 105d |  | Sr Dev2-BJ [25%]; Sr Dev1-SA [25%]; Dev1-MD [18.8%]; Dev2-SS [18.8%]; Dev3-AK [12.5%] | 176h | 111.62 | 20,791.62 |
| 84 | 1.2.2.5 | **Task 3: caAERS Adoption** | 22d | 2008-04-01 | 2008-04-30 |  | 2008-04-01 | 2008-04-30 | 22d | 105d |  |  | 215h |  | 15,367.07 |
| 85 | 1.2.2.5.1 | Active adoption at sites | 22d | 2008-04-01 | 2008-04-30 |  | 2008-04-01 | 2008-04-30 | 22d | 105d |  | Mayo [25%]; WFU [25%] | 83h |  | 5,474.99 |
| 86 | 1.2.2.5.2 | Create Data sharing and Adoption Plan | 22d | 2008-04-01 | 2008-04-30 |  | 2008-04-01 | 2008-04-30 | 22d | 105d |  | Mayo [12.5%]; WFU [12.5%] | 44h |  | 2,886.62 |
| 87 | 1.2.2.5.3 | Integration with Local CTMS Preparation | 22d | 2008-04-01 | 2008-04-30 |  | 2008-04-01 | 2008-04-30 | 22d | 105d |  | Mayo [12.5%]; WFU [12.5%]; CALGB [25%] | 88h |  | 7,005.46 |
| 88 | 1.2.2.6 | **Task 4: Production Support** | 22d | 2008-04-01 | 2008-04-30 |  | 2008-04-01 | 2008-04-30 | 22d | 105d |  |  | 440h | 266.28 | 49,436.28 |
| 89 | 1.2.2.6.1 | Technical Support (I2) | 22d | 2008-04-01 | 2008-04-30 |  | 2008-04-01 | 2008-04-30 | 22d | 105d |  | Dev1-MD [12.5%]; Dev2-SS [12.5%] | 44h | 24.94 | 4,644.94 |
| 90 | 1.2.2.6.2 | Bug Fixes (I2) | 22d | 2008-04-01 | 2008-04-30 |  | 2008-04-01 | 2008-04-30 | 22d | 105d |  | Sr Dev2-BJ [12.5%]; Sr Dev1-SA [12.5%]; Dev2-SS [25%]; Dev1-MD [25%]; Dev3-AK [25%] | 176h | 105.69 | 19,685.69 |
| 91 | 1.2.2.6.3 | Enhancements (I2) | 22d | 2008-04-01 | 2008-04-30 |  | 2008-04-01 | 2008-04-30 | 22d | 105d |  | Sr Dev2-BJ [12.5%]; Sr Dev1-SA [12.5%]; Dev1-MD [25%]; Dev2-SS [25%]; Dev3-AK [25%] | 176h | 105.69 | 19,685.69 |
| 92 | 1.2.2.6.4 | Public Demos of caAERS | 22d | 2008-04-01 | 2008-04-30 |  | 2008-04-01 | 2008-04-30 | 22d | 105d |  | Product Dir [6.2%]; Product Mgr [6.2%]; Dev1-MD [6.2%]; Dev2-SS [6.2%] | 44h | 29.97 | 5,419.97 |
| 93 | 1.2.2.7 | **Task 5: NCI Enterprise AE Analysis** | 22d | 2008-04-01 | 2008-04-30 |  | 2008-04-01 | 2008-04-30 | 22d | 105d |  |  | 88h | 99.75 | 9,339.75 |
| 94 | 1.2.2.7.1 | Gather Requirements for NCE Enterprise AE System | 10d | 2008-04-01 | 2008-04-14 |  | 2008-04-01 | 2008-04-14 | 10d | 105d | 0d | Analyst [50%] | 40h | 49.88 | 4,249.88 |
| 95 | 1.2.2.7.2 | Prepare Outline and Strategy Document | 12d | 2008-04-15 | 2008-04-30 | 94 | 2008-04-15 | 2008-04-30 | 12d | 105d |  | Analyst [50%] | 48h | 49.88 | 5,089.88 |
| 96 | 1.2.2.8 | **Environment & Configuration Management** | 22d | 2008-04-01 | 2008-04-30 |  | 2008-04-01 | 2008-04-30 | 22d | 105d |  |  | 66h | 36.75 | 6,966.75 |
| 97 | 1.2.2.8.1 | Maintain environment | 22d | 2008-04-01 | 2008-04-30 |  | 2008-04-01 | 2008-04-30 | 22d | 105d |  | Dev3-AK [25%] | 44h | 24.94 | 4,644.94 |
| 98 | 1.2.2.8.2 | Maintain repository, manage builds | 22d | 2008-04-01 | 2008-04-30 |  | 2008-04-01 | 2008-04-30 | 22d | 105d |  | QA Eng [12.5%] | 22h | 11.81 | 2,321.81 |
| 99 | 1.2.2.9 | **Testing** | 22d | 2008-04-01 | 2008-04-30 |  | 2008-04-01 | 2008-04-30 | 22d | 105d |  |  | 66h | 35.44 | 6,965.44 |
| 100 | 1.2.2.9.1 | Test Planning | 22d | 2008-04-01 | 2008-04-30 |  | 2008-04-01 | 2008-04-30 | 22d | 105d |  | QA Eng [12.5%] | 22h | 11.81 | 2,321.81 |
| 101 | 1.2.2.9.2 | Testing | 22d | 2008-04-01 | 2008-04-30 |  | 2008-04-01 | 2008-04-30 | 22d | 105d |  | QA Eng [25%] | 44h | 23.62 | 4,643.63 |
| 102 | 1.2.2.10 | **Documentation** | 22d | 2008-04-01 | 2008-04-30 |  | 2008-04-01 | 2008-04-30 | 22d | 105d |  |  |  |  |  |
| 103 | 1.2.2.10.1 | Update User Documents | 22d | 2008-04-01 | 2008-04-30 |  | 2008-04-01 | 2008-04-30 | 22d | 105d |  |  |  |  |  |

| ID | WBS | Task | Type | Duration | Start | Finish | Baseline start | Baseline finish | Baseline duration | Total slack | Constraint | Resources | Work | Cost | Baseline cost |
| --- | --- | --- | --- | --- | --- | --- | --- | --- | --- | --- | --- | --- | --- | --- | --- |
| 104 | 1.2.2.11 | **Deliverables, Milestone, and Events** |  | 15d | 2008-04-10 | 2008-04-30 | 2008-04-10 | 2008-04-30 | 15d | 4d |  |  |  | 135 | 135 |
| 105 | 1.2.2.11.1 | Submit March Status Report | milestone | 0d | 2008-04-10 | 2008-04-10 | 2008-04-10 | 2008-04-10 | 0d | 120d | start no earlier than 2008-04-10 | Product Mgr [75%] |  | 97.5 | 97.5 |
| 106 | 1.2.2.11.2 | Submit March Financial Report | milestone | 0d | 2008-04-10 | 2008-04-10 | 2008-04-10 | 2008-04-10 | 0d | 120d | start no earlier than 2008-04-10 | Product Dir [25%] |  | 37.5 | 37.5 |
| 107 | 1.2.2.11.3 | Baselined Project Plan | milestone | 0d | 2008-04-15 | 2008-04-15 | 2008-04-15 | 2008-04-15 | 0d | 0d | must finish on 2008-04-15 |  |  |  |  |
| 108 | 1.2.2.11.4 | Attend caAERS F2F | milestone | 0d | 2008-04-15 | 2008-04-15 | 2008-04-15 | 2008-04-15 | 0d | 116d | finish no earlier than 2008-04-15 |  |  |  |  |
| 109 | 1.2.2.11.5 | Attend CTMS F2F | milestone | 0d | 2008-04-29 | 2008-04-29 | 2008-04-29 | 2008-04-29 | 0d | 0d | must start on 2008-04-29 |  |  |  |  |
| 110 | 1.2.2.11.6 | Submit Adoption Plan | milestone | 0d | 2008-04-30 | 2008-04-30 | 2008-04-30 | 2008-04-30 | 0d | 0d | must finish on 2008-04-30 |  |  |  |  |
| 111 | 1.2.2.11.7 | Submit Master Design Document | milestone | 0d | 2008-04-30 | 2008-04-30 | 2008-04-30 | 2008-04-30 | 0d | 0d | must finish on 2008-04-30 |  |  |  |  |
| 112 | 1.3 | **Construction** |  | 87d | 2008-05-01 | 2008-08-29 | 2008-05-01 | 2008-08-29 | 87d | 7d |  |  | 8584h | 4,662.66 | 896,557.38 |
| 113 | 1.3.1 | **Iteration 3 (May)** |  | 22d | 2008-05-01 | 2008-05-30 | 2008-05-01 | 2008-05-30 | 22d | 7d | start no earlier than 2008-05-01 |  | 2084h | 1,128.48 | 218,716.8 |
| 114 | 1.3.1.1 | **Project Management** |  | 22d | 2008-05-01 | 2008-05-30 | 2008-05-01 | 2008-05-30 | 22d | 83d |  |  | 144h | 117.5 | 19,407.5 |
| 115 | 1.3.1.1.1 | Update PMP (I3) |  | 22d | 2008-05-01 | 2008-05-30 | 2008-05-01 | 2008-05-30 | 22d | 83d |  | Product Mgr [6.2%] | 10.5h | 8.12 | 1,373.12 |
| 116 | 1.3.1.1.2 | Status Meetings (I3) |  | 22d | 2008-05-01 | 2008-05-30 | 2008-05-01 | 2008-05-30 | 22d | 83d |  | Product Mgr [12.5%] | 21h | 16.25 | 2,746.25 |
| 117 | 1.3.1.1.3 | Project Control (I3) |  | 22d | 2008-05-01 | 2008-05-30 | 2008-05-01 | 2008-05-30 | 22d | 83d |  | Product Mgr [25%] | 42h | 32.5 | 5,492.5 |
| 118 | 1.3.1.1.4 | Adopter Management (I3) |  | 22d | 2008-05-01 | 2008-05-30 | 2008-05-01 | 2008-05-30 | 22d | 83d |  | Product Mgr [6.2%] | 10.5h | 8.12 | 1,373.12 |
| 119 | 1.3.1.1.5 | Stakeholder Management (I3) |  | 22d | 2008-05-01 | 2008-05-30 | 2008-05-01 | 2008-05-30 | 22d | 83d |  | Product Dir [6.2%] | 9.5h | 9.38 | 1,434.38 |
| 120 | 1.3.1.1.6 | Elaborators Meeting (I3) |  | 22d | 2008-05-01 | 2008-05-30 | 2008-05-01 | 2008-05-30 | 22d | 83d |  | Product Dir [12.5%]; Product Mgr [12.5%] | 40h | 35 | 5,615 |
| 121 | 1.3.1.1.7 | Risk Management (I3) |  | 22d | 2008-05-01 | 2008-05-30 | 2008-05-01 | 2008-05-30 | 22d | 83d |  | Product Mgr [6.2%] | 10.5h | 8.12 | 1,373.12 |
| 122 | 1.3.1.2 | **Admin** |  | 22d | 2008-05-01 | 2008-05-30 | 2008-05-01 | 2008-05-30 | 22d | 83d |  |  | 44h | 17.5 | 3,097.5 |
| 123 | 1.3.1.2.1 | Contracts Management |  | 22d | 2008-05-01 | 2008-05-30 | 2008-05-01 | 2008-05-30 | 22d | 83d |  | Admin [12.5%] | 22h | 8.75 | 1,548.75 |
| 124 | 1.3.1.2.2 | Timesheet Management |  | 22d | 2008-05-01 | 2008-05-30 | 2008-05-01 | 2008-05-30 | 22d | 83d |  | Admin [12.5%] | 22h | 8.75 | 1,548.75 |
| 125 | 1.3.1.3 | **Task 1: Service Specification and Code Base Refactoring** |  | 22d | 2008-05-01 | 2008-05-30 | 2008-05-01 | 2008-05-30 | 22d | 83d |  |  | 264h | 188.81 | 35,168.81 |
| 126 | 1.3.1.3.1 | Service Specifications (I3) |  | 22d | 2008-05-01 | 2008-05-30 | 2008-05-01 | 2008-05-30 | 22d | 83d |  | Sr Dev2-BJ [25%]; Arch1-VK [6.2%]; Arch2-RC [6.2%] | 66h | 47.5 | 8,847.5 |
| 127 | 1.3.1.3.2 | Migration to Services (I3) |  | 22d | 2008-05-01 | 2008-05-30 | 2008-05-01 | 2008-05-30 | 22d | 83d |  | Sr Dev2-BJ [50%]; Sr Dev1-SA [50%]; Arch1-VK [6.2%]; Arch2-RC [6.2%] | 198h | 141.31 | 26,321.31 |

| ID | WBS | Task | Duration | Start | Finish | Baseline start | Baseline finish | Baseline duration | Total slack | Resources | Work | Cost | Baseline cost |
| --- | --- | --- | --- | --- | --- | --- | --- | --- | --- | --- | --- | --- | --- |
| 128 | 1.3.1.4 | **Task 2: caAERS Development** | 22d | 2008-05-01 | 2008-05-30 | 2008-05-01 | 2008-05-30 | 22d | 83d |  | 523h | 206.81 | 51,989.35 |
| 129 | 1.3.1.4.1 | Update caAERS SRS (I3) | 22d | 2008-05-01 | 2008-05-30 | 2008-05-01 | 2008-05-30 | 22d | 83d | Mayo [18.8%]; WFU [18.8%]; CALGB [25%]; Analyst [12.5%] | 132h | 12.47 | 10,771.24 |
| 130 | 1.3.1.4.2 | Update caAERS Use Cases (I3) | 22d | 2008-05-01 | 2008-05-30 | 2008-05-01 | 2008-05-30 | 22d | 83d | Mayo [18.8%]; WFU [18.8%]; CALGB [25%]; Analyst [12.5%] | 132h | 12.47 | 10,771.24 |
| 131 | 1.3.1.4.3 | Update UML (I3) | 22d | 2008-05-01 | 2008-05-30 | 2008-05-01 | 2008-05-30 | 22d | 83d | Dev1-MD [6.2%]; Dev2-SS [6.2%]; Dev3-AK [6.2%]; Sr Dev2-BJ [4.5%]; Sr Dev1-SA [2.8%] | 33h | 27.74 | 3,492.74 |
| 132 | 1.3.1.4.4 | Create Design Documents (I3) | 22d | 2008-05-01 | 2008-05-30 | 2008-05-01 | 2008-05-30 | 22d | 83d | Sr Dev1-SA [6.2%]; Sr Dev2-BJ [6.2%]; Arch1-VK [6.2%]; Arch2-RC [6.2%]; Usability Eng [25%]; UI [25%] | 116h | 75.75 | 12,355.75 |
| 133 | 1.3.1.4.5 | Implement Module 5: Advanced Routing and Review (I3) | 22d | 2008-05-01 | 2008-05-30 | 2008-05-01 | 2008-05-30 | 22d | 83d | Sr Dev2-BJ [18.8%]; Sr Dev1-SA [43.7%] | 110h | 78.37 | 14,598.38 |
| 134 | 1.3.1.5 | **Task 3: caAERS Adoption** | 22d | 2008-05-01 | 2008-05-30 | 2008-05-01 | 2008-05-30 | 22d | 83d |  | 220h |  | 15,665.32 |
| 135 | 1.3.1.5.1 | Active adoption at sites | 22d | 2008-05-01 | 2008-05-30 | 2008-05-01 | 2008-05-30 | 22d | 83d | Mayo [25%]; WFU [25%] | 88h |  | 5,773.24 |
| 136 | 1.3.1.5.2 | Data sharing planning | 22d | 2008-05-01 | 2008-05-30 | 2008-05-01 | 2008-05-30 | 22d | 83d | Mayo [12.5%]; WFU [12.5%] | 44h |  | 2,886.62 |
| 137 | 1.3.1.5.3 | Integration with Local CTMS Preparation | 22d | 2008-05-01 | 2008-05-30 | 2008-05-01 | 2008-05-30 | 22d | 83d | Mayo [12.5%]; WFU [12.5%]; CALGB [25%] | 88h |  | 7,005.46 |
| 138 | 1.3.1.6 | **Task 4: Production Support** | 22d | 2008-05-01 | 2008-05-30 | 2008-05-01 | 2008-05-30 | 22d | 83d |  | 471h | 273.11 | 50,418.11 |
| 139 | 1.3.1.6.1 | Technical Support (I3) | 22d | 2008-05-01 | 2008-05-30 | 2008-05-01 | 2008-05-30 | 22d | 83d | Dev1-MD [12.5%]; Dev2-SS [12.5%] | 44h | 24.94 | 4,644.94 |
| 140 | 1.3.1.6.2 | Bug Fixes (I3) | 22d | 2008-05-01 | 2008-05-30 | 2008-05-01 | 2008-05-30 | 22d | 83d | Dev2-SS [25%]; Dev1-MD [25%]; Dev3-AK [25%] | 132h | 74.81 | 13,934.81 |
| 141 | 1.3.1.6.3 | Enhancements (I3) | 22d | 2008-05-01 | 2008-05-30 | 2008-05-01 | 2008-05-30 | 22d | 83d | Dev1-MD [50%]; Dev2-SS [50%]; Dev3-AK [43.8%] | 253h | 143.39 | 26,708.39 |
| 142 | 1.3.1.6.4 | Public Demos of caAERS (I3) | 22d | 2008-05-01 | 2008-05-30 | 2008-05-01 | 2008-05-30 | 22d | 83d | Product Dir [6.2%]; Product Mgr [6.2%]; Dev1-MD [6.2%]; Dev2-SS [6.2%] | 42h | 29.97 | 5,129.97 |
| 143 | 1.3.1.7 | **Task 5: NCI Enterprise AE Analysis** | 22d | 2008-05-01 | 2008-05-30 | 2008-05-01 | 2008-05-30 | 22d | 83d |  | 154h | 92.62 | 17,252.62 |
| 144 | 1.3.1.7.1 | Flesh out CTEP Requirements (I3) | 22d | 2008-05-01 | 2008-05-30 | 2008-05-01 | 2008-05-30 | 22d | 83d | Analyst [75%]; Arch2-RC [6.2%]; Arch1-VK [6.2%] | 154h | 92.62 | 17,252.62 |
| 145 | 1.3.1.8 | **Environment & Configuration Management** | 22d | 2008-05-01 | 2008-05-30 | 2008-05-01 | 2008-05-30 | 22d | 83d |  | 66h | 36.75 | 6,966.75 |
| 146 | 1.3.1.8.1 | Maintain environment (I3) | 22d | 2008-05-01 | 2008-05-30 | 2008-05-01 | 2008-05-30 | 22d | 83d | Dev3-AK [25%] | 44h | 24.94 | 4,644.94 |
| 147 | 1.3.1.8.2 | Maintain repository, manage builds (I3) | 22d | 2008-05-01 | 2008-05-30 | 2008-05-01 | 2008-05-30 | 22d | 83d | QA Eng [12.5%] | 22h | 11.81 | 2,321.81 |
| 148 | 1.3.1.9 | **Testing** | 22d | 2008-05-01 | 2008-05-30 | 2008-05-01 | 2008-05-30 | 22d | 83d |  | 154h | 35.44 | 13,970.9 |
| 149 | 1.3.1.9.1 | Test Planning (I3) | 22d | 2008-05-01 | 2008-05-30 | 2008-05-01 | 2008-05-30 | 22d | 83d | QA Eng [12.5%] | 22h | 11.81 | 2,321.81 |
| 150 | 1.3.1.9.2 | Testing (I3) | 22d | 2008-05-01 | 2008-05-30 | 2008-05-01 | 2008-05-30 | 22d | 83d | QA Eng [25%] | 44h | 23.62 | 4,643.63 |
| 151 | 1.3.1.9.3 | Adopter Testing and Feedback (I3) | 22d | 2008-05-01 | 2008-05-30 | 2008-05-01 | 2008-05-30 | 22d | 83d | Mayo [12.5%]; WFU [12.5%]; CALGB [25%] | 88h |  | 7,005.46 |

| ID | WBS | Task | Type | Duration | Start | Finish | Baseline start | Baseline finish | Baseline duration | Total slack | Constraint | Resources | Work | Cost | Baseline cost |
| --- | --- | --- | --- | --- | --- | --- | --- | --- | --- | --- | --- | --- | --- | --- | --- |
| 152 | 1.3.1.10 | **Documentation** |  | 22d | 2008-05-01 | 2008-05-30 | 2008-05-01 | 2008-05-30 | 22d | 83d |  |  | 44h | 24.94 | 4,644.94 |
| 153 | 1.3.1.10.1 | Update User Documents (I3) |  | 22d | 2008-05-01 | 2008-05-30 | 2008-05-01 | 2008-05-30 | 22d | 83d |  | Writer [25%] | 44h | 24.94 | 4,644.94 |
| 154 | 1.3.1.11 | **Deliverables, Milestone, and Events** |  | 0d | 2008-05-09 | 2008-05-09 | 2008-05-09 | 2008-05-09 | 0d | 0d |  |  |  | 135 | 135 |
| 155 | 1.3.1.11.1 | Submit April Status Report | milestone | 0d | 2008-05-09 | 2008-05-09 | 2008-05-09 | 2008-05-09 | 0d | 0d | must finish on 2008-05-09 | Product Mgr [75%] |  | 97.5 | 97.5 |
| 156 | 1.3.1.11.2 | Submit April Financial Report | milestone | 0d | 2008-05-09 | 2008-05-09 | 2008-05-09 | 2008-05-09 | 0d | 0d | must finish on 2008-05-09 | Product Dir [25%] |  | 37.5 | 37.5 |
| 157 | 1.3.2 | **Iteration 4 (June)** |  | 21d | 2008-06-01 | 2008-06-30 | 2008-06-01 | 2008-06-30 | 21d | 7d | start no earlier than 2008-06-01 |  | 2100h | 1,170.98 | 218,910.74 |
| 158 | 1.3.2.1 | **Project Management** |  | 21d | 2008-06-02 | 2008-06-30 | 2008-06-02 | 2008-06-30 | 21d | 62d |  |  | 147h | 117.5 | 19,857.5 |
| 159 | 1.3.2.1.1 | Update PMP (I4) |  | 21d | 2008-06-02 | 2008-06-30 | 2008-06-02 | 2008-06-30 | 21d | 62d |  | Product Mgr [6.2%] | 10.5h | 8.12 | 1,373.12 |
| 160 | 1.3.2.1.2 | Status Meetings (I4) |  | 21d | 2008-06-02 | 2008-06-30 | 2008-06-02 | 2008-06-30 | 21d | 62d |  | Product Mgr [12.5%] | 21h | 16.25 | 2,746.25 |
| 161 | 1.3.2.1.3 | Project Control (I4) |  | 21d | 2008-06-02 | 2008-06-30 | 2008-06-02 | 2008-06-30 | 21d | 62d |  | Product Mgr [25%] | 42h | 32.5 | 5,492.5 |
| 162 | 1.3.2.1.4 | Adopter Management (I4) |  | 21d | 2008-06-02 | 2008-06-30 | 2008-06-02 | 2008-06-30 | 21d | 62d |  | Product Mgr [6.2%] | 10.5h | 8.12 | 1,373.12 |
| 163 | 1.3.2.1.5 | Stakeholder Management (I4) |  | 21d | 2008-06-02 | 2008-06-30 | 2008-06-02 | 2008-06-30 | 21d | 62d |  | Product Dir [6.2%] | 10.5h | 9.38 | 1,584.38 |
| 164 | 1.3.2.1.6 | Elaborators Meeting (I4) |  | 21d | 2008-06-02 | 2008-06-30 | 2008-06-02 | 2008-06-30 | 21d | 62d |  | Product Dir [12.5%]; Product Mgr [12.5%] | 42h | 35 | 5,915 |
| 165 | 1.3.2.1.7 | Risk Management (I4) |  | 21d | 2008-06-02 | 2008-06-30 | 2008-06-02 | 2008-06-30 | 21d | 62d |  | Product Mgr [6.2%] | 10.5h | 8.12 | 1,373.12 |
| 166 | 1.3.2.2 | **Admin** |  | 21d | 2008-06-02 | 2008-06-30 | 2008-06-02 | 2008-06-30 | 21d | 62d |  |  | 42h | 17.5 | 2,957.5 |
| 167 | 1.3.2.2.1 | Contracts Management |  | 21d | 2008-06-02 | 2008-06-30 | 2008-06-02 | 2008-06-30 | 21d | 62d |  | Admin [12.5%] | 21h | 8.75 | 1,478.75 |
| 168 | 1.3.2.2.2 | Timesheet Management |  | 21d | 2008-06-02 | 2008-06-30 | 2008-06-02 | 2008-06-30 | 21d | 62d |  | Admin [12.5%] | 21h | 8.75 | 1,478.75 |
| 169 | 1.3.2.3 | **Task 1: Service Specification and Code Base Refactoring** |  | 21d | 2008-06-02 | 2008-06-30 | 2008-06-02 | 2008-06-30 | 21d | 62d |  |  | 252h | 188.81 | 33,578.81 |
| 170 | 1.3.2.3.1 | Service Specifications (I4) |  | 21d | 2008-06-02 | 2008-06-30 | 2008-06-02 | 2008-06-30 | 21d | 62d |  | Sr Dev2-BJ [25%]; Arch1-VK [12.5%]; Arch2-RC [12.5%] | 84h | 65.31 | 11,615.31 |
| 171 | 1.3.2.3.2 | Migration to Services (I4) |  | 21d | 2008-06-02 | 2008-06-30 | 2008-06-02 | 2008-06-30 | 21d | 62d |  | Sr Dev2-BJ [50%]; Sr Dev1-SA [50%] | 168h | 123.5 | 21,963.5 |
| 172 | 1.3.2.4 | **Task 2: caAERS Development** |  | 21d | 2008-06-01 | 2008-06-30 | 2008-06-01 | 2008-06-30 | 21d | 62d |  |  | 703.5h | 366.87 | 72,336.81 |
| 173 | 1.3.2.4.1 | Update caAERS SRS (I4) |  | 21d | 2008-06-02 | 2008-06-30 | 2008-06-02 | 2008-06-30 | 21d | 62d |  | Mayo [12.5%]; WFU [12.5%]; CALGB [12.5%]; Analyst [12.5%] | 84h | 12.47 | 6,938.69 |
| 174 | 1.3.2.4.2 | Update caAERS Use Cases (I4) |  | 21d | 2008-06-02 | 2008-06-30 | 2008-06-02 | 2008-06-30 | 21d | 62d |  | Mayo [12.5%]; WFU [12.5%]; CALGB [12.5%]; Analyst [12.5%] | 84h | 12.47 | 6,938.69 |
| 175 | 1.3.2.4.3 | Update UML (I4) |  | 21d | 2008-06-01 | 2008-06-30 | 2008-06-01 | 2008-06-30 | 21d | 62d |  | Dev1-MD [6.2%]; Dev2-SS [6.2%]; Dev3-AK [6.2%]; Sr Dev2-BJ [4.5%]; Sr Dev1-SA [2.8%] | 31.5h | 27.74 | 3,335.24 |
| 176 | 1.3.2.4.4 | Create Design Documents (I4) |  | 21d | 2008-06-02 | 2008-06-30 | 2008-06-02 | 2008-06-30 | 21d | 62d |  | Sr Dev1-SA [6.2%]; Sr Dev2-BJ [6.2%]; Arch1-VK [6.2%]; Arch2-RC [6.2%] | 42h | 33.25 | 5,913.25 |
| 177 | 1.3.2.4.5 | Implement Module 5: Advanced Routing and Review (I4) |  | 21d | 2008-06-02 | 2008-06-30 | 2008-06-02 | 2008-06-30 | 21d | 62d |  | Sr Dev2-BJ [18.8%]; Sr Dev1-SA [43.7%] | 105h | 78.37 | 13,938.38 |
| 178 | 1.3.2.4.6 | Integration with Local CTMS Systems |  | 21d | 2008-06-02 | 2008-06-30 | 2008-06-02 | 2008-06-30 | 21d | 62d |  | Dev2-SS [50%] | 84h | 49.88 | 8,869.88 |
| 179 | 1.3.2.4.7 | Usability Improvements for Expedited and Routine Report Flows (I4) |  | 21d | 2008-06-02 | 2008-06-30 | 2008-06-02 | 2008-06-30 | 21d | 62d |  | UI [50%]; Usability Eng [50%]; Arch1-VK [6.2%]; Arch2-RC [6.2%] | 189h | 102.81 | 17,532.81 |
| 180 | 1.3.2.4.8 | Routine AE Management Enhancements (I4) |  | 21d | 2008-06-02 | 2008-06-30 | 2008-06-02 | 2008-06-30 | 21d | 62d |  | Dev1-MD [50%] | 84h | 49.88 | 8,869.88 |

| ID | WBS | Task | Type | Duration | Start | Finish | Baseline start | Baseline finish | Baseline duration | Total slack | Constraint | Resources | Work | Cost | Baseline cost |
| --- | --- | --- | --- | --- | --- | --- | --- | --- | --- | --- | --- | --- | --- | --- | --- |
| 181 | 1.3.2.5 | **Task 3: caAERS Adoption** |  | 21d | 2008-06-02 | 2008-06-30 | 2008-06-02 | 2008-06-30 | 21d | 62d |  |  | 294h |  | 21,640.29 |
| 182 | 1.3.2.5.1 | Active adoption at sites |  | 21d | 2008-06-02 | 2008-06-30 | 2008-06-02 | 2008-06-30 | 21d | 62d |  | Mayo [25%]; WFU [25%] | 84h |  | 5,510.82 |
| 183 | 1.3.2.5.2 | Data sharing planning |  | 21d | 2008-06-02 | 2008-06-30 | 2008-06-02 | 2008-06-30 | 21d | 62d |  | Mayo [12.5%]; WFU [12.5%] | 42h |  | 2,755.41 |
| 184 | 1.3.2.5.3 | Integration with Local CTMS |  | 21d | 2008-06-02 | 2008-06-30 | 2008-06-02 | 2008-06-30 | 21d | 62d |  | Mayo [25%]; WFU [25%]; CALGB [50%] | 168h |  | 13,374.06 |
| 185 | 1.3.2.6 | **Task 4: Production Support** |  | 21d | 2008-06-02 | 2008-06-30 | 2008-06-02 | 2008-06-30 | 21d | 62d |  |  | 283.5h | 173.36 | 30,675.86 |
| 186 | 1.3.2.6.1 | Technical Support (I4) |  | 21d | 2008-06-02 | 2008-06-30 | 2008-06-02 | 2008-06-30 | 21d | 62d |  | Dev1-MD [12.5%]; Dev2-SS [12.5%] | 42h | 24.94 | 4,434.94 |
| 187 | 1.3.2.6.2 | Bug Fixes (I4) |  | 21d | 2008-06-02 | 2008-06-30 | 2008-06-02 | 2008-06-30 | 21d | 62d |  | Dev2-SS [12.5%]; Dev1-MD [12.5%]; Dev3-AK [25%] | 84h | 49.88 | 8,869.88 |
| 188 | 1.3.2.6.3 | Enhancements (I4) |  | 21d | 2008-06-02 | 2008-06-30 | 2008-06-02 | 2008-06-30 | 21d | 62d |  | Dev1-MD [12.5%]; Dev2-SS [12.5%]; Dev3-AK [43.8%] | 115.5h | 68.58 | 12,196.08 |
| 189 | 1.3.2.6.4 | Public Demos of caAERS (I4) |  | 21d | 2008-06-02 | 2008-06-30 | 2008-06-02 | 2008-06-30 | 21d | 62d |  | Product Dir [6.2%]; Product Mgr [6.2%]; Dev1-MD [6.2%]; Dev2-SS [6.2%] | 42h | 29.97 | 5,174.97 |
| 190 | 1.3.2.7 | **Task 5: NCI Enterprise AE Analysis** |  | 21d | 2008-06-02 | 2008-06-30 | 2008-06-02 | 2008-06-30 | 21d | 62d |  |  | 126h | 74.81 | 13,304.81 |
| 191 | 1.3.2.7.1 | Flesh out CTEP Requirements (I4) |  | 21d | 2008-06-02 | 2008-06-30 | 2008-06-02 | 2008-06-30 | 21d | 62d |  | Analyst [75%] | 126h | 74.81 | 13,304.81 |
| 192 | 1.3.2.8 | **Environment & Configuration Management** |  | 21d | 2008-06-02 | 2008-06-30 | 2008-06-02 | 2008-06-30 | 21d | 62d |  |  | 63h | 36.75 | 6,651.75 |
| 193 | 1.3.2.8.1 | Maintain environment (I4) |  | 21d | 2008-06-02 | 2008-06-30 | 2008-06-02 | 2008-06-30 | 21d | 62d |  | Dev3-AK [25%] | 42h | 24.94 | 4,434.94 |
| 194 | 1.3.2.8.2 | Maintain repository, manage builds (I4) |  | 21d | 2008-06-02 | 2008-06-30 | 2008-06-02 | 2008-06-30 | 21d | 62d |  | QA Eng [12.5%] | 21h | 11.81 | 2,216.81 |
| 195 | 1.3.2.9 | **Testing** |  | 21d | 2008-06-02 | 2008-06-30 | 2008-06-02 | 2008-06-30 | 21d | 62d |  |  | 147h | 35.44 | 13,337.47 |
| 196 | 1.3.2.9.1 | Test Planning (I4) |  | 21d | 2008-06-02 | 2008-06-30 | 2008-06-02 | 2008-06-30 | 21d | 62d |  | QA Eng [12.5%] | 21h | 11.81 | 2,216.81 |
| 197 | 1.3.2.9.2 | Testing (I4) |  | 21d | 2008-06-02 | 2008-06-30 | 2008-06-02 | 2008-06-30 | 21d | 62d |  | QA Eng [25%] | 42h | 23.62 | 4,433.62 |
| 198 | 1.3.2.9.3 | Adopter Testing and Feedback (I4) |  | 21d | 2008-06-02 | 2008-06-30 | 2008-06-02 | 2008-06-30 | 21d | 62d |  | Mayo [12.5%]; WFU [12.5%]; CALGB [25%] | 84h |  | 6,687.03 |
| 199 | 1.3.2.10 | **Documentation** |  | 21d | 2008-06-02 | 2008-06-30 | 2008-06-02 | 2008-06-30 | 21d | 62d |  |  | 42h | 24.94 | 4,434.94 |
| 200 | 1.3.2.10.1 | Update User Documents (I4) |  | 21d | 2008-06-02 | 2008-06-30 | 2008-06-02 | 2008-06-30 | 21d | 62d |  | Writer [25%] | 42h | 24.94 | 4,434.94 |
| 201 | 1.3.2.11 | **Deliverables, Milestone, and Events** |  | 0d | 2008-06-10 | 2008-06-10 | 2008-06-10 | 2008-06-10 | 0d | 0d |  |  |  | 135 | 135 |
| 202 | 1.3.2.11.1 | Submit May Status Report | milestone | 0d | 2008-06-10 | 2008-06-10 | 2008-06-10 | 2008-06-10 | 0d | 0d | must finish on 2008-06-10 | Product Mgr [75%] |  | 97.5 | 97.5 |
| 203 | 1.3.2.11.2 | Submit May Financial Report | milestone | 0d | 2008-06-10 | 2008-06-10 | 2008-06-10 | 2008-06-10 | 0d | 0d | must finish on 2008-06-10 | Product Dir [25%] |  | 37.5 | 37.5 |
| 204 | 1.3.3 | **Iteration 5 (July)** |  | 23d | 2008-07-01 | 2008-07-31 | 2008-07-01 | 2008-07-31 | 23d | 8d | start no earlier than 2008-07-01 |  | 2282h | 1,167.28 | 237,624.16 |
| 205 | 1.3.3.1 | **Project Management** |  | 23d | 2008-07-01 | 2008-07-31 | 2008-07-01 | 2008-07-31 | 23d | 39d |  |  | 152.5h | 117.5 | 20,602.5 |
| 206 | 1.3.3.1.1 | Update PMP (I5) |  | 23d | 2008-07-01 | 2008-07-31 | 2008-07-01 | 2008-07-31 | 23d | 39d |  | Product Mgr [6.2%] | 11h | 8.12 | 1,438.12 |
| 207 | 1.3.3.1.2 | Status Meetings (I5) |  | 23d | 2008-07-01 | 2008-07-31 | 2008-07-01 | 2008-07-31 | 23d | 39d |  | Product Mgr [12.5%] | 22h | 16.25 | 2,876.25 |
| 208 | 1.3.3.1.3 | Project Control (I5) |  | 23d | 2008-07-01 | 2008-07-31 | 2008-07-01 | 2008-07-31 | 23d | 39d |  | Product Mgr [25%] | 44h | 32.5 | 5,752.5 |
| 209 | 1.3.3.1.4 | Adopter Management (I5) |  | 23d | 2008-07-01 | 2008-07-31 | 2008-07-01 | 2008-07-31 | 23d | 39d |  | Product Mgr [6.2%] | 11h | 8.12 | 1,438.12 |
| 210 | 1.3.3.1.5 | Stakeholder Management (I5) |  | 23d | 2008-07-01 | 2008-07-31 | 2008-07-01 | 2008-07-31 | 23d | 39d |  | Product Dir [6.2%] | 11h | 9.38 | 1,659.38 |
| 211 | 1.3.3.1.6 | Elaborators Meeting (I5) |  | 23d | 2008-07-01 | 2008-07-31 | 2008-07-01 | 2008-07-31 | 23d | 39d |  | Product Dir [12.5%]; Product Mgr [12.5%] | 43h | 35 | 6,065 |
| 212 | 1.3.3.1.7 | Risk Management (I5) |  | 23d | 2008-07-01 | 2008-07-31 | 2008-07-01 | 2008-07-31 | 23d | 39d |  | Product Mgr [6.2%] | 10.5h | 8.12 | 1,373.12 |

| ID | WBS | Task | Duration | Start | Finish | Baseline start | Baseline finish | Baseline duration | Total slack | Resources | Work | Cost | Baseline cost |
| --- | --- | --- | --- | --- | --- | --- | --- | --- | --- | --- | --- | --- | --- |
| 213 | 1.3.3.2 | **Admin** | 23d | 2008-07-01 | 2008-07-31 | 2008-07-01 | 2008-07-31 | 23d | 39d |  | 46h | 17.5 | 3,237.5 |
| 214 | 1.3.3.2.1 | Contracts Management | 23d | 2008-07-01 | 2008-07-31 | 2008-07-01 | 2008-07-31 | 23d | 39d | Admin [12.5%] | 23h | 8.75 | 1,618.75 |
| 215 | 1.3.3.2.2 | Timesheet Management | 23d | 2008-07-01 | 2008-07-31 | 2008-07-01 | 2008-07-31 | 23d | 39d | Admin [12.5%] | 23h | 8.75 | 1,618.75 |
| 216 | 1.3.3.3 | **Task 1: Service Specification and Code Base Refactoring** | 23d | 2008-07-01 | 2008-07-31 | 2008-07-01 | 2008-07-31 | 23d | 39d |  | 230h | 158.53 | 30,863.53 |
| 217 | 1.3.3.3.1 | Service Specifications (I5) | 23d | 2008-07-01 | 2008-07-31 | 2008-07-01 | 2008-07-31 | 23d | 39d | Sr Dev2-BJ [12.5%]; Arch1-VK [12.5%]; Arch2-RC [12.5%] | 69h | 50.47 | 9,825.47 |
| 218 | 1.3.3.3.2 | Migration to Services (I5) | 23d | 2008-07-01 | 2008-07-31 | 2008-07-01 | 2008-07-31 | 23d | 39d | Sr Dev2-BJ [43.8%]; Sr Dev1-SA [43.8%] | 161h | 108.06 | 21,038.06 |
| 219 | 1.3.3.4 | **Task 2: caAERS Development** | 23d | 2008-07-01 | 2008-07-31 | 2008-07-01 | 2008-07-31 | 23d | 39d |  | 889h | 437.1 | 92,898.82 |
| 220 | 1.3.3.4.1 | Update caAERS SRS (I5) | 23d | 2008-07-01 | 2008-07-31 | 2008-07-01 | 2008-07-31 | 23d | 39d | Mayo [12.5%]; WFU [12.5%]; CALGB [12.5%]; Analyst [12.5%] | 92h | 12.47 | 7,598.33 |
| 221 | 1.3.3.4.2 | Update caAERS Use Cases (I5) | 23d | 2008-07-01 | 2008-07-31 | 2008-07-01 | 2008-07-31 | 23d | 39d | Mayo [12.5%]; WFU [12.5%]; CALGB [12.5%]; Analyst [12.5%] | 92h | 12.47 | 7,598.33 |
| 222 | 1.3.3.4.3 | Update UML (I5) | 23d | 2008-07-01 | 2008-07-31 | 2008-07-01 | 2008-07-31 | 23d | 39d | Dev1-MD [6.2%]; Dev2-SS [6.2%]; Dev3-AK [6.2%]; Sr Dev2-BJ [4.5%]; Sr Dev1-SA [2.8%] | 34.5h | 27.74 | 3,650.24 |
| 223 | 1.3.3.4.4 | Create Design Documents (I5) | 23d | 2008-07-01 | 2008-07-31 | 2008-07-01 | 2008-07-31 | 23d | 39d | Sr Dev1-SA [6.2%]; Sr Dev2-BJ [6.2%]; Arch1-VK [12.5%]; Arch2-RC [12.5%] | 69h | 51.06 | 9,941.06 |
| 224 | 1.3.3.4.5 | Integration with Local CTMS Systems (I5) | 23d | 2008-07-01 | 2008-07-31 | 2008-07-01 | 2008-07-31 | 23d | 39d | Dev2-SS [50%] | 92h | 49.88 | 9,709.88 |
| 225 | 1.3.3.4.6 | Usability Improvements for Expedited and Routine Report Flows (I5) | 23d | 2008-07-01 | 2008-07-31 | 2008-07-01 | 2008-07-31 | 23d | 39d | UI [50%]; Usability Eng [45.7%]; Sr Dev2-BJ [37.5%] | 245h | 125.84 | 23,710.84 |
| 226 | 1.3.3.4.7 | Routine AE Management Enhancements (I5) | 23d | 2008-07-01 | 2008-07-31 | 2008-07-01 | 2008-07-31 | 23d | 39d | Dev1-MD [50%] | 92h | 49.88 | 9,709.88 |
| 227 | 1.3.3.4.8 | Controlled Vocabulary (I5) | 23d | 2008-07-01 | 2008-07-31 | 2008-07-01 | 2008-07-31 | 23d | 39d | Dev3-AK [43.8%] | 80.5h | 43.64 | 8,496.14 |
| 228 | 1.3.3.4.9 | Module 12: Automated Decision Support (I5) | 23d | 2008-07-01 | 2008-07-31 | 2008-07-01 | 2008-07-31 | 23d | 39d | Sr Dev1-SA [50%] | 92h | 64.12 | 12,484.12 |
| 229 | 1.3.3.5 | **Task 3: caAERS Adoption** | 23d | 2008-07-01 | 2008-07-31 | 2008-07-01 | 2008-07-31 | 23d | 39d |  | 322h |  | 23,701.27 |
| 230 | 1.3.3.5.1 | Active adoption at sites | 23d | 2008-07-01 | 2008-07-31 | 2008-07-01 | 2008-07-31 | 23d | 39d | Mayo [25%]; WFU [25%] | 92h |  | 6,035.66 |
| 231 | 1.3.3.5.2 | Data sharing planning | 23d | 2008-07-01 | 2008-07-31 | 2008-07-01 | 2008-07-31 | 23d | 39d | Mayo [12.5%]; WFU [12.5%] | 46h |  | 3,017.83 |
| 232 | 1.3.3.5.3 | Integration with Local CTMS | 23d | 2008-07-01 | 2008-07-31 | 2008-07-01 | 2008-07-31 | 23d | 39d | Mayo [25%]; WFU [25%]; CALGB [50%] | 184h |  | 14,647.78 |
| 233 | 1.3.3.6 | **Task 4: Production Support** | 23d | 2008-07-01 | 2008-07-31 | 2008-07-01 | 2008-07-31 | 23d | 39d |  | 228.5h | 129.72 | 24,879.72 |
| 234 | 1.3.3.6.1 | Technical Support (I5) | 23d | 2008-07-01 | 2008-07-31 | 2008-07-01 | 2008-07-31 | 23d | 39d | Dev1-MD [12.5%]; Dev2-SS [12.5%] | 46h | 24.94 | 4,854.94 |
| 235 | 1.3.3.6.2 | Bug Fixes (I5) | 23d | 2008-07-01 | 2008-07-31 | 2008-07-01 | 2008-07-31 | 23d | 39d | Dev2-SS [12.5%]; Dev1-MD [12.5%]; Dev3-AK [12.5%] | 69h | 37.41 | 7,282.41 |
| 236 | 1.3.3.6.3 | Enhancements (I5) | 23d | 2008-07-01 | 2008-07-31 | 2008-07-01 | 2008-07-31 | 23d | 39d | Dev1-MD [12.5%]; Dev2-SS [12.5%]; Dev3-AK [12.5%] | 69h | 37.41 | 7,282.41 |
| 237 | 1.3.3.6.4 | Public Demos of caAERS (I5) | 23d | 2008-07-01 | 2008-07-31 | 2008-07-01 | 2008-07-31 | 23d | 39d | Product Dir [6.2%]; Product Mgr [6.2%]; Dev1-MD [6.2%]; Dev2-SS [6.2%] | 44.5h | 29.97 | 5,459.97 |

| ID | WBS | Task | Type | Duration | Start | Finish | Baseline start | Baseline finish | Baseline duration | Total slack | Constraint | Resources | Work | Cost | Baseline cost |
| --- | --- | --- | --- | --- | --- | --- | --- | --- | --- | --- | --- | --- | --- | --- | --- |
| 238 | 1.3.3.7 | **Task 5: NCI Enterprise AE Analysis** |  | 23d | 2008-07-01 | 2008-07-31 | 2008-07-01 | 2008-07-31 | 23d | 39d |  |  | 138h | 74.81 | 14,564.81 |
| 239 | 1.3.3.7.1 | Flesh out DCP and CIP Requirements (I5) |  | 23d | 2008-07-01 | 2008-07-31 | 2008-07-01 | 2008-07-31 | 23d | 39d |  | Analyst [75%] | 138h | 74.81 | 14,564.81 |
| 240 | 1.3.3.8 | **Environment & Configuration Management** |  | 23d | 2008-07-01 | 2008-07-31 | 2008-07-01 | 2008-07-31 | 23d | 39d |  |  | 69h | 36.75 | 7,281.75 |
| 241 | 1.3.3.8.1 | Maintain environment (I5) |  | 23d | 2008-07-01 | 2008-07-31 | 2008-07-01 | 2008-07-31 | 23d | 39d |  | Dev3-AK [25%] | 46h | 24.94 | 4,854.94 |
| 242 | 1.3.3.8.2 | Maintain repository, manage builds (I5) |  | 23d | 2008-07-01 | 2008-07-31 | 2008-07-01 | 2008-07-31 | 23d | 39d |  | QA Eng [12.5%] | 23h | 11.81 | 2,426.81 |
| 243 | 1.3.3.9 | **Testing** |  | 23d | 2008-07-01 | 2008-07-31 | 2008-07-01 | 2008-07-31 | 23d | 39d |  |  | 161h | 35.44 | 14,604.33 |
| 244 | 1.3.3.9.1 | Test Planning (I5) |  | 23d | 2008-07-01 | 2008-07-31 | 2008-07-01 | 2008-07-31 | 23d | 39d |  | QA Eng [12.5%] | 23h | 11.81 | 2,426.81 |
| 245 | 1.3.3.9.2 | Testing (I5) |  | 23d | 2008-07-01 | 2008-07-31 | 2008-07-01 | 2008-07-31 | 23d | 39d |  | QA Eng [25%] | 46h | 23.62 | 4,853.63 |
| 246 | 1.3.3.9.3 | Adopter Testing and Feedback (I5) |  | 23d | 2008-07-01 | 2008-07-31 | 2008-07-01 | 2008-07-31 | 23d | 39d |  | Mayo [12.5%]; WFU [12.5%]; CALGB [25%] | 92h |  | 7,323.89 |
| 247 | 1.3.3.10 | **Documentation** |  | 23d | 2008-07-01 | 2008-07-31 | 2008-07-01 | 2008-07-31 | 23d | 39d |  |  | 46h | 24.94 | 4,854.94 |
| 248 | 1.3.3.10.1 | Update User Documents (I5) |  | 23d | 2008-07-01 | 2008-07-31 | 2008-07-01 | 2008-07-31 | 23d | 39d |  | Writer [25%] | 46h | 24.94 | 4,854.94 |
| 249 | 1.3.3.11 | **Deliverables, Milestone, and Events** |  | 0d | 2008-07-10 | 2008-07-10 | 2008-07-10 | 2008-07-10 | 0d | 0d |  |  |  | 135 | 135 |
| 250 | 1.3.3.11.1 | Submit June Status Report | milestone | 0d | 2008-07-10 | 2008-07-10 | 2008-07-10 | 2008-07-10 | 0d | 0d | must finish on 2008-07-10 | Product Mgr [75%] |  | 97.5 | 97.5 |
| 251 | 1.3.3.11.2 | Submit June Financial Report | milestone | 0d | 2008-07-10 | 2008-07-10 | 2008-07-10 | 2008-07-10 | 0d | 0d | must finish on 2008-07-10 | Product Dir [25%] |  | 37.5 | 37.5 |
| 252 | 1.3.4 | **Iteration 6 (August)** |  | 21d | 2008-08-01 | 2008-08-29 | 2008-08-01 | 2008-08-29 | 21d | 6d | start no earlier than 2008-08-01 |  | 2118h | 1,195.92 | 221,305.68 |
| 253 | 1.3.4.1 | **Project Management** |  | 21d | 2008-08-01 | 2008-08-29 | 2008-08-01 | 2008-08-29 | 21d | 18d |  |  | 147h | 117.5 | 19,857.5 |
| 254 | 1.3.4.1.1 | Update PMP (I6) |  | 21d | 2008-08-01 | 2008-08-29 | 2008-08-01 | 2008-08-29 | 21d | 18d |  | Product Mgr [6.2%] | 10.5h | 8.12 | 1,373.12 |
| 255 | 1.3.4.1.2 | Status Meetings (I6) |  | 21d | 2008-08-01 | 2008-08-29 | 2008-08-01 | 2008-08-29 | 21d | 18d |  | Product Mgr [12.5%] | 21h | 16.25 | 2,746.25 |
| 256 | 1.3.4.1.3 | Project Control (I6) |  | 21d | 2008-08-01 | 2008-08-29 | 2008-08-01 | 2008-08-29 | 21d | 18d |  | Product Mgr [25%] | 42h | 32.5 | 5,492.5 |
| 257 | 1.3.4.1.4 | Adopter Management (I6) |  | 21d | 2008-08-01 | 2008-08-29 | 2008-08-01 | 2008-08-29 | 21d | 18d |  | Product Mgr [6.2%] | 10.5h | 8.12 | 1,373.12 |
| 258 | 1.3.4.1.5 | Stakeholder Management (I6) |  | 21d | 2008-08-01 | 2008-08-29 | 2008-08-01 | 2008-08-29 | 21d | 18d |  | Product Dir [6.2%] | 10.5h | 9.38 | 1,584.38 |
| 259 | 1.3.4.1.6 | Elaborators Meeting (I6) |  | 21d | 2008-08-01 | 2008-08-29 | 2008-08-01 | 2008-08-29 | 21d | 18d |  | Product Dir [12.5%]; Product Mgr [12.5%] | 42h | 35 | 5,915 |
| 260 | 1.3.4.1.7 | Risk Management (I6) |  | 21d | 2008-08-01 | 2008-08-29 | 2008-08-01 | 2008-08-29 | 21d | 18d |  | Product Mgr [6.2%] | 10.5h | 8.12 | 1,373.12 |
| 261 | 1.3.4.2 | **Admin** |  | 21d | 2008-08-01 | 2008-08-29 | 2008-08-01 | 2008-08-29 | 21d | 18d |  |  | 42h | 17.5 | 2,957.5 |
| 262 | 1.3.4.2.1 | Contracts Management |  | 21d | 2008-08-01 | 2008-08-29 | 2008-08-01 | 2008-08-29 | 21d | 18d |  | Admin [12.5%] | 21h | 8.75 | 1,478.75 |
| 263 | 1.3.4.2.2 | Timesheet Management |  | 21d | 2008-08-01 | 2008-08-29 | 2008-08-01 | 2008-08-29 | 21d | 18d |  | Admin [12.5%] | 21h | 8.75 | 1,478.75 |

| ID | WBS | Task | Duration | Start | Finish | Baseline start | Baseline finish | Baseline duration | Total slack | Resources | Work | Cost | Baseline cost |
| --- | --- | --- | --- | --- | --- | --- | --- | --- | --- | --- | --- | --- | --- |
| 264 | 1.3.4.3 | **Task 1: Service Specification and Code Base Refactoring** | 21d | 2008-08-01 | 2008-08-29 | 2008-08-01 | 2008-08-29 | 21d | 18d |  | 168h | 123.5 | 21,963.5 |
| 265 | 1.3.4.3.1 | Migration to Services (I6) | 21d | 2008-08-01 | 2008-08-29 | 2008-08-01 | 2008-08-29 | 21d | 18d | Sr Dev2-BJ [50%]; Sr Dev1-SA [50%] | 168h | 123.5 | 21,963.5 |
| 266 | 1.3.4.4 | **Task 2: caAERS Development** | 21d | 2008-08-01 | 2008-08-29 | 2008-08-01 | 2008-08-29 | 21d | 18d |  | 784.5h | 460.98 | 84,672.81 |
| 267 | 1.3.4.4.1 | Update caAERS SRS (I6) | 21d | 2008-08-01 | 2008-08-29 | 2008-08-01 | 2008-08-29 | 21d | 18d | Mayo [6.2%]; WFU [6.2%]; CALGB [6.2%]; Analyst [12.5%] | 52.5h | 12.47 | 4,578.08 |
| 268 | 1.3.4.4.2 | Update caAERS Use Cases (I5) | 21d | 2008-08-01 | 2008-08-29 | 2008-08-01 | 2008-08-29 | 21d | 18d | Mayo [12.5%]; WFU [12.5%]; CALGB [12.5%]; Analyst [12.5%] | 84h | 12.47 | 6,938.69 |
| 269 | 1.3.4.4.3 | Update UML (I6) | 21d | 2008-08-01 | 2008-08-29 | 2008-08-01 | 2008-08-29 | 21d | 18d | Dev1-MD [6.2%]; Dev2-SS [6.2%]; Dev3-AK [6.2%]; Sr Dev2-BJ [4.5%]; Sr Dev1-SA [2.8%] | 31.5h | 27.74 | 3,335.24 |
| 270 | 1.3.4.4.4 | Create Design Documents (I6) | 21d | 2008-08-01 | 2008-08-29 | 2008-08-01 | 2008-08-29 | 21d | 18d | Sr Dev1-SA [6.2%]; Sr Dev2-BJ [6.2%]; Arch2-RC [6.2%] | 31.5h | 24.34 | 4,329.34 |
| 271 | 1.3.4.4.5 | Integration with Local CTMS Systems (I6) | 21d | 2008-08-01 | 2008-08-29 | 2008-08-01 | 2008-08-29 | 21d | 18d | Dev2-SS [50%]; Arch2-RC [18.7%] | 115.5h | 76.59 | 13,621.59 |
| 272 | 1.3.4.4.6 | Usability Improvements for Expedited and Routine Report Flows (I6) | 21d | 2008-08-01 | 2008-08-29 | 2008-08-01 | 2008-08-29 | 21d | 18d | UI [50%]; Usability Eng [50%]; Sr Dev2-BJ [25%] | 186h | 114.69 | 17,604.69 |
| 273 | 1.3.4.4.7 | Routine AE Management Enhancements (I6) | 21d | 2008-08-01 | 2008-08-29 | 2008-08-01 | 2008-08-29 | 21d | 18d | Dev1-MD [50%] | 84h | 49.88 | 8,869.88 |
| 274 | 1.3.4.4.8 | Controlled Vocabulary (I6) | 21d | 2008-08-01 | 2008-08-29 | 2008-08-01 | 2008-08-29 | 21d | 18d | Dev3-AK [43.8%] | 73.5h | 43.64 | 7,761.14 |
| 275 | 1.3.4.4.9 | Module 12: Automated Decision Support (I6) | 21d | 2008-08-01 | 2008-08-29 | 2008-08-01 | 2008-08-29 | 21d | 18d | Sr Dev1-SA [31.2%] | 52.5h | 40.08 | 7,127.58 |
| 276 | 1.3.4.4.10 | Installer | 21d | 2008-08-01 | 2008-08-29 | 2008-08-01 | 2008-08-29 | 21d | 18d | Arch1-VK [25%]; Sr Dev1-SA [12.5%]; Sr Dev2-BJ [6.2%] | 73.5h | 59.08 | 10,506.58 |
| 277 | 1.3.4.5 | **Task 3: caAERS Adoption** | 21d | 2008-08-01 | 2008-08-29 | 2008-08-01 | 2008-08-29 | 21d | 18d |  | 315h |  | 23,017.99 |
| 278 | 1.3.4.5.1 | Active adoption at sites | 21d | 2008-08-01 | 2008-08-29 | 2008-08-01 | 2008-08-29 | 21d | 18d | Mayo [25%]; WFU [25%] | 84h |  | 5,510.82 |
| 279 | 1.3.4.5.2 | Data sharing planning | 21d | 2008-08-01 | 2008-08-29 | 2008-08-01 | 2008-08-29 | 21d | 18d | Mayo [12.5%]; WFU [12.5%] | 42h |  | 2,755.41 |
| 280 | 1.3.4.5.3 | Integration with Local CTMS | 21d | 2008-08-01 | 2008-08-29 | 2008-08-01 | 2008-08-29 | 21d | 18d | Mayo [31.2%]; WFU [31.2%]; CALGB [50%] | 189h |  | 14,751.76 |
| 281 | 1.3.4.6 | **Task 4: Production Support** | 21d | 2008-08-01 | 2008-08-29 | 2008-08-01 | 2008-08-29 | 21d | 18d |  | 231h | 144.56 | 25,554.56 |
| 282 | 1.3.4.6.1 | Technical Support (I6) | 21d | 2008-08-01 | 2008-08-29 | 2008-08-01 | 2008-08-29 | 21d | 18d | Dev1-MD [12.5%]; Dev2-SS [12.5%] | 42h | 24.94 | 4,434.94 |
| 283 | 1.3.4.6.2 | Bug Fixes (I6) | 21d | 2008-08-01 | 2008-08-29 | 2008-08-01 | 2008-08-29 | 21d | 18d | Dev2-SS [12.5%]; Dev1-MD [12.5%]; Dev3-AK [12.5%]; Sr Dev2-BJ [12.5%] | 84h | 52.25 | 9,292.25 |
| 284 | 1.3.4.6.3 | Enhancements (I6) | 21d | 2008-08-01 | 2008-08-29 | 2008-08-01 | 2008-08-29 | 21d | 18d | Dev1-MD [12.5%]; Dev2-SS [12.5%]; Dev3-AK [12.5%] | 63h | 37.41 | 6,652.41 |
| 285 | 1.3.4.6.4 | Public Demos of caAERS (I6) | 21d | 2008-08-01 | 2008-08-29 | 2008-08-01 | 2008-08-29 | 21d | 18d | Product Dir [6.2%]; Product Mgr [6.2%]; Dev1-MD [6.2%]; Dev2-SS [6.2%] | 42h | 29.97 | 5,174.97 |
| 286 | 1.3.4.7 | **Task 5: NCI Enterprise AE Analysis** | 21d | 2008-08-01 | 2008-08-29 | 2008-08-01 | 2008-08-29 | 21d | 18d |  | 126h | 74.81 | 13,304.81 |
| 287 | 1.3.4.7.1 | Gap Analysis Draft (I6) | 21d | 2008-08-01 | 2008-08-29 | 2008-08-01 | 2008-08-29 | 21d | 18d | Analyst [75%] | 126h | 74.81 | 13,304.81 |

| ID | WBS | Task | Type | Duration | Start | Finish | Baseline start | Baseline finish | Baseline duration | Total slack | Constraint | Resources | Work | Cost | Baseline cost |
| --- | --- | --- | --- | --- | --- | --- | --- | --- | --- | --- | --- | --- | --- | --- | --- |
| 288 | 1.3.4.8 | **Environment & Configuration Management** |  | 21d | 2008-08-01 | 2008-08-29 | 2008-08-01 | 2008-08-29 | 21d | 18d |  |  | 63h | 36.75 | 6,651.75 |
| 289 | 1.3.4.8.1 | Maintain environment (I6) |  | 21d | 2008-08-01 | 2008-08-29 | 2008-08-01 | 2008-08-29 | 21d | 18d |  | Dev3-AK [25%] | 42h | 24.94 | 4,434.94 |
| 290 | 1.3.4.8.2 | Maintain repository, manage builds (I6) |  | 21d | 2008-08-01 | 2008-08-29 | 2008-08-01 | 2008-08-29 | 21d | 18d |  | QA Eng [12.5%] | 21h | 11.81 | 2,216.81 |
| 291 | 1.3.4.9 | **Testing** |  | 21d | 2008-08-01 | 2008-08-29 | 2008-08-01 | 2008-08-29 | 21d | 18d |  |  | 157.5h | 35.44 | 14,320.37 |
| 292 | 1.3.4.9.1 | Test Planning (I6) |  | 21d | 2008-08-01 | 2008-08-29 | 2008-08-01 | 2008-08-29 | 21d | 18d |  | QA Eng [12.5%] | 21h | 11.81 | 2,216.81 |
| 293 | 1.3.4.9.2 | Testing (I6) |  | 21d | 2008-08-01 | 2008-08-29 | 2008-08-01 | 2008-08-29 | 21d | 18d |  | QA Eng [25%] | 42h | 23.62 | 4,433.62 |
| 294 | 1.3.4.9.3 | Adopter Testing and Feedback (I6) |  | 21d | 2008-08-01 | 2008-08-29 | 2008-08-01 | 2008-08-29 | 21d | 18d |  | Mayo [12.5%]; WFU [12.5%]; CALGB [31.3%] | 94.5h |  | 7,669.94 |
| 295 | 1.3.4.10 | **Documentation** |  | 21d | 2008-08-01 | 2008-08-29 | 2008-08-01 | 2008-08-29 | 21d | 18d |  |  | 84h | 49.88 | 8,869.88 |
| 296 | 1.3.4.10.1 | Update User Documents (I6) |  | 21d | 2008-08-01 | 2008-08-29 | 2008-08-01 | 2008-08-29 | 21d | 18d |  | Writer [50%] | 84h | 49.88 | 8,869.88 |
| 297 | 1.3.4.11 | **Deliverables, Milestone, and Events** |  | 11d | 2008-08-01 | 2008-08-15 | 2008-08-01 | 2008-08-15 | 11d | 6d |  |  |  | 135 | 135 |
| 298 | 1.3.4.11.1 | Submit July Status Report | milestone | 0d | 2008-08-08 | 2008-08-08 | 2008-08-08 | 2008-08-08 | 0d | 0d | must finish on 2008-08-08 | Product Mgr [75%] |  | 97.5 | 97.5 |
| 299 | 1.3.4.11.2 | Submit July Financial Report | milestone | 0d | 2008-08-08 | 2008-08-08 | 2008-08-08 | 2008-08-08 | 0d | 0d | must finish on 2008-08-08 | Product Dir [25%] |  | 37.5 | 37.5 |
| 300 | 1.3.4.11.3 | Submit UML Model | milestone | 0d | 2008-08-01 | 2008-08-01 | 2008-08-01 | 2008-08-01 | 0d | 39d |  |  |  |  |  |
| 301 | 1.3.4.11.4 | Submit UC Document (caAERS) | milestone | 0d | 2008-08-15 | 2008-08-15 | 2008-08-15 | 2008-08-15 | 0d | 0d | must finish on 2008-08-15 |  |  |  |  |
| 302 | 1.3.4.11.5 | Submit Integrated UC Document (CCTS) | milestone | 0d | 2008-08-15 | 2008-08-15 | 2008-08-15 | 2008-08-15 | 0d | 0d | must finish on 2008-08-15 |  |  |  |  |
| 303 | 1.3.4.11.6 | Submit SRS Document | milestone | 0d | 2008-08-15 | 2008-08-15 | 2008-08-15 | 2008-08-15 | 0d | 0d | must finish on 2008-08-15 |  |  |  |  |
| 304 | 1.3.4.11.7 | CDE Usage Report | milestone | 0d | 2008-08-01 | 2008-08-01 | 2008-08-01 | 2008-08-01 | 0d | 39d |  |  |  |  |  |
| 305 | 1.4 | **Transition** |  | 18d | 2008-09-01 | 2008-09-25 | 2008-09-01 | 2008-09-25 | 18d | 0d |  |  | 1472h | 949.46 | 156,389.3 |
| 306 | 1.4.1 | **Iteration 7 (September)** |  | 18d | 2008-09-01 | 2008-09-25 | 2008-09-01 | 2008-09-25 | 18d | 0d | start no earlier than 2008-09-01 |  | 1472h | 949.46 | 156,389.3 |
| 307 | 1.4.1.1 | **Project Management** |  | 18d | 2008-09-02 | 2008-09-25 | 2008-09-02 | 2008-09-25 | 18d | 0d |  |  | 136h | 135 | 18,535 |
| 308 | 1.4.1.1.1 | Update PMP (I7) |  | 18d | 2008-09-02 | 2008-09-25 | 2008-09-02 | 2008-09-25 | 18d | 0d |  | Product Mgr [6.2%] | 8h | 8.12 | 1,048.12 |
| 309 | 1.4.1.1.2 | Status Meetings (I7) |  | 18d | 2008-09-02 | 2008-09-25 | 2008-09-02 | 2008-09-25 | 18d | 0d |  | Product Mgr [12.5%] | 17h | 16.25 | 2,226.25 |
| 310 | 1.4.1.1.3 | Project Control (I7) |  | 18d | 2008-09-02 | 2008-09-25 | 2008-09-02 | 2008-09-25 | 18d | 0d |  | Product Mgr [25%] | 34h | 32.5 | 4,452.5 |
| 311 | 1.4.1.1.4 | Adopter Management (I7) |  | 18d | 2008-09-02 | 2008-09-25 | 2008-09-02 | 2008-09-25 | 18d | 0d |  | Product Mgr [12.5%] | 17h | 16.25 | 2,226.25 |
| 312 | 1.4.1.1.5 | Stakeholder Management (I7) |  | 18d | 2008-09-02 | 2008-09-25 | 2008-09-02 | 2008-09-25 | 18d | 0d |  | Product Dir [12.5%] | 18h | 18.75 | 2,718.75 |
| 313 | 1.4.1.1.6 | Elaborators Meeting (I7) |  | 18d | 2008-09-02 | 2008-09-25 | 2008-09-02 | 2008-09-25 | 18d | 0d |  | Product Dir [12.5%]; Product Mgr [12.5%] | 34h | 35 | 4,815 |
| 314 | 1.4.1.1.7 | Risk Management (I7) |  | 18d | 2008-09-02 | 2008-09-25 | 2008-09-02 | 2008-09-25 | 18d | 0d |  | Product Mgr [6.2%] | 8h | 8.12 | 1,048.12 |

| ID | WBS | Task | Type | Duration | Start | Finish | Baseline start | Baseline finish | Baseline duration | Total slack | Constraint | Resources | Work | Cost | Baseline cost |
| --- | --- | --- | --- | --- | --- | --- | --- | --- | --- | --- | --- | --- | --- | --- | --- |
| 315 | 1.4.1.2 | **Admin** |  | 18d | 2008-09-02 | 2008-09-25 | 2008-09-02 | 2008-09-25 | 18d | 0d |  |  | 36h | 17.5 | 2,537.5 |
| 316 | 1.4.1.2.1 | Contracts Management |  | 18d | 2008-09-02 | 2008-09-25 | 2008-09-02 | 2008-09-25 | 18d | 0d |  | Admin [12.5%] | 18h | 8.75 | 1,268.75 |
| 317 | 1.4.1.2.2 | Timesheet Management |  | 18d | 2008-09-02 | 2008-09-25 | 2008-09-02 | 2008-09-25 | 18d | 0d |  | Admin [12.5%] | 18h | 8.75 | 1,268.75 |
| 318 | 1.4.1.3 | **Task 1: Service** |  | 18d | 2008-09-01 | 2008-09-25 | 2008-09-01 | 2008-09-25 | 18d | 0d |  |  | 170h | 196.53 | 20,946.53 |
| 319 | 1.4.1.3.1 | Deployment to NCI QA, DEMO |  | 18d | 2008-09-01 | 2008-09-25 | 2008-09-01 | 2008-09-25 | 18d | 0d |  | Sr Dev2-BJ [50%]; Sr Dev1-SA [50%]; Dev1-MD [12.5%]; Dev2-SS [12.5%]; Dev3-AK [12.5%]; Arch2-RC [25%] | 170h | 196.53 | 20,946.53 |
| 320 | 1.4.1.4 | **Task 2: caAERS Development** |  | 18d | 2008-09-02 | 2008-09-25 | 2008-09-02 | 2008-09-25 | 18d | 0d |  |  | 360h | 261.25 | 39,861.25 |
| 321 | 1.4.1.4.1 | Bug Fixes (I7) |  | 18d | 2008-09-02 | 2008-09-25 | 2008-09-02 | 2008-09-25 | 18d | 0d |  | Sr Dev2-BJ [25%]; Sr Dev1-SA [25%]; Dev1-MD [75%]; Dev2-SS [75%]; Dev3-AK [50%] | 360h | 261.25 | 39,861.25 |
| 322 | 1.4.1.5 | **Task 3: caAERS Adoption** |  | 18d | 2008-09-02 | 2008-09-25 | 2008-09-02 | 2008-09-25 | 18d | 0d |  |  | 138h | 17.81 | 11,710.61 |
| 323 | 1.4.1.5.1 | Integration with Local CTMS |  | 18d | 2008-09-02 | 2008-09-25 | 2008-09-02 | 2008-09-25 | 18d | 0d |  | Mayo [37.5%]; WFU [37.5%]; CALGB [37.5%]; Arch2-RC [12.5%] | 138h | 17.81 | 11,710.61 |
| 324 | 1.4.1.6 | **Task 4: Production Support** |  | 18d | 2008-09-02 | 2008-09-25 | 2008-09-02 | 2008-09-25 | 18d | 0d |  |  | 226h | 103.91 | 22,747.43 |
| 325 | 1.4.1.6.1 | Deployment of 1.5 to Adopters |  | 18d | 2008-09-02 | 2008-09-25 | 2008-09-02 | 2008-09-25 | 18d | 0d |  | Mayo [25%]; WFU [25%]; CALGB [25%]; Sr Dev1-SA [12.5%]; Sr Dev2-BJ [12.5%]; Dev3-AK [12.5%]; Dev1-MD [12.5%]; Dev2-SS [12.5%]; Arch1-VK [25%] | 226h | 103.91 | 22,747.43 |
| 326 | 1.4.1.7 | **Task 5: NCI Enterprise AE Analysis** |  | 18d | 2008-09-02 | 2008-09-25 | 2008-09-02 | 2008-09-25 | 18d | 0d |  |  | 122h | 95.4 | 13,355.4 |
| 327 | 1.4.1.7.1 | Complete Gap Analysis (I7) |  | 18d | 2008-09-02 | 2008-09-25 | 2008-09-02 | 2008-09-25 | 18d | 0d |  | Analyst [77.8%]; Arch2-RC [12.5%] | 122h | 95.4 | 13,355.4 |
| 328 | 1.4.1.8 | **Testing** |  | 18d | 2008-09-01 | 2008-09-25 | 2008-09-01 | 2008-09-25 | 18d | 0d |  |  | 165h | 35.44 | 14,113.96 |
| 329 | 1.4.1.8.1 | Testing (I7) |  | 18d | 2008-09-01 | 2008-09-25 | 2008-09-01 | 2008-09-25 | 18d | 0d |  | QA Eng [37.5%] | 57h | 35.44 | 6,020.44 |
| 330 | 1.4.1.8.2 | Adopter Testing and Feedback (I7) |  | 18d | 2008-09-02 | 2008-09-25 | 2008-09-02 | 2008-09-25 | 18d | 0d |  | Mayo [25%]; WFU [25%]; CALGB [25%] | 108h |  | 8,093.52 |
| 331 | 1.4.1.9 | **Environment & Configuration Management** |  | 18d | 2008-09-01 | 2008-09-25 | 2008-09-01 | 2008-09-25 | 18d | 0d |  |  | 55h | 36.75 | 5,811.75 |
| 332 | 1.4.1.9.1 | Maintain environment (I7) |  | 18d | 2008-09-02 | 2008-09-25 | 2008-09-02 | 2008-09-25 | 18d | 0d |  | Dev3-AK [25%] | 36h | 24.94 | 3,804.94 |
| 333 | 1.4.1.9.2 | Maintain repository, manage builds (I7) |  | 18d | 2008-09-01 | 2008-09-25 | 2008-09-01 | 2008-09-25 | 18d | 0d |  | QA Eng [12.5%] | 19h | 11.81 | 2,006.81 |
| 334 | 1.4.1.10 | **Documentation** |  | 18d | 2008-09-02 | 2008-09-25 | 2008-09-02 | 2008-09-25 | 18d | 0d |  |  | 64h | 49.88 | 6,769.88 |
| 335 | 1.4.1.10.1 | Update User Manuals |  | 18d | 2008-09-02 | 2008-09-25 | 2008-09-02 | 2008-09-25 | 18d | 0d |  | Writer [50%] | 64h | 49.88 | 6,769.88 |
| 336 | 1.4.1.11 | **Deliverables, Milestones, Events** |  | 18d | 2008-09-01 | 2008-09-25 | 2008-09-01 | 2008-09-25 | 18d | 0d |  |  |  |  |  |
| 337 | 1.4.1.11.1 | Submit August Status Report | milestone | 0d | 2008-09-10 | 2008-09-10 | 2008-09-10 | 2008-09-10 | 0d | 0d | must finish on 2008-09-10 |  |  |  |  |
| 338 | 1.4.1.11.2 | Submit August Financial Report | milestone | 0d | 2008-09-10 | 2008-09-10 | 2008-09-10 | 2008-09-10 | 0d | 0d | must finish on 2008-09-10 |  |  |  |  |
| 339 | 1.4.1.11.3 | Submit API Documents, API Code | milestone | 0d | 2008-09-15 | 2008-09-15 | 2008-09-15 | 2008-09-15 | 0d | 0d | must finish on 2008-09-15 |  |  |  |  |
| 340 | 1.4.1.11.4 | Submit Source Code for CCTS 1.5, Test Activity Logs, Bug Report | milestone | 0d | 2008-09-15 | 2008-09-15 | 2008-09-15 | 2008-09-15 | 0d | 0d | must finish on 2008-09-15 |  |  |  |  |
| 341 | 1.4.1.11.5 | Submit Updated Users Guide and Administration Guide | milestone | 0d | 2008-09-01 | 2008-09-01 | 2008-09-01 | 2008-09-01 | 0d | 18d |  |  |  |  |  |
| 342 | 1.4.1.11.6 | Submit Installation Guide and Release Notes | milestone | 0d | 2008-09-01 | 2008-09-01 | 2008-09-01 | 2008-09-01 | 0d | 18d |  |  |  |  |  |
| 343 | 1.4.1.11.7 | Submit Semantically Annotated XMIs | milestone | 0d | 2008-09-01 | 2008-09-01 | 2008-09-01 | 2008-09-01 | 0d | 18d |  |  |  |  |  |
| 344 | 1.4.1.11.8 | Submit CDE Usage Report and Annotated XML Files | milestone | 0d | 2008-09-25 | 2008-09-25 | 2008-09-25 | 2008-09-25 | 0d | 0d | must finish on 2008-09-25 |  |  |  |  |
| 345 | 1.4.1.11.9 | Submit Enterprise AE Requirements and Gap Analysis Report | milestone | 0d | 2008-09-15 | 2008-09-15 | 2008-09-15 | 2008-09-15 | 0d | 0d | must finish on 2008-09-15 |  |  |  |  |
| 346 | 1.5 | Project End Date | milestone | 0d | 2008-09-25 | 2008-09-25 | 2008-09-25 | 2008-09-25 | 0d | 0d | must finish on 2008-09-25 |  |  |  |  |
