# caAERS-TransitionPhasePlan

Schedule from MS Project, 2007-10-15 to 2007-12-03.

## Calendars

- Standard: Mon-Fri 08:00-12:00, 13:00-17:00; Sat-Sun off.

## Resources

| Resource |
| --- |
| caAERS Developers |
| Mayo |
| WFU |
| Edmond |
| CTEP |
| DCP |
| NCI |
| NCICB |

## Schedule

| ID | WBS | Task | Type | Duration | Start | Finish | Predecessors | Total slack | Free slack | Constraint | Resources | Work |
| --- | --- | --- | --- | --- | --- | --- | --- | --- | --- | --- | --- | --- |
| 1 | 1 | **caAERS - Transition Phase** |  | 33d | 2007-10-15 | 2007-11-28 |  | 0d |  |  |  | 1184h |
| 2 | 1.1 | Start Transition Phase | milestone | 0d | 2007-10-15 | 2007-10-15 |  | 0d |  | start no earlier than 2007-10-15 |  |  |
| 3 | 1.2 | **Planning** |  | 11d | 2007-10-15 | 2007-10-29 |  | 15d |  |  |  | 408h |
| 4 | 1.2.1 | **Deployment Plan** |  | 5d | 2007-10-15 | 2007-10-19 |  | 15d |  |  |  | 56h |
| 5 | 1.2.1.1 | **Prepare Deployment Plan** |  | 1d | 2007-10-15 | 2007-10-15 | 2 | 15d |  |  | caAERS Developers | 8h |
| 6 | 1.2.1.1.1 | Determine set of Testers and Groups for UAT |  | 1d | 2007-10-15 | 2007-10-15 |  | 15d | 0d |  |  |  |
| 7 | 1.2.1.1.2 | Determine when to open UAT to Users outside of caAERS-Adopters |  | 1d | 2007-10-15 | 2007-10-15 |  | 35d |  |  |  |  |
| 8 | 1.2.1.2 | Review Plan |  | 2d | 2007-10-16 | 2007-10-17 | 6, 5 | 15d | 0d |  | Mayo; WFU | 32h |
| 9 | 1.2.1.3 | Update Plan |  | 2d | 2007-10-18 | 2007-10-19 | 8 | 15d | 0d |  | caAERS Developers | 16h |
| 10 | 1.2.1.4 | Finalize and Submit Plan (Task 4.1) | milestone | 0d | 2007-10-19 | 2007-10-19 | 9 | 15d |  |  | caAERS Developers |  |
| 11 | 1.2.2 | **Pilot/Parallel Testing Phase Plan** |  | 11d | 2007-10-15 | 2007-10-29 |  | 25d |  |  |  | 352h |
| 12 | 1.2.2.1 | Select studies for parallel test |  | 5d | 2007-10-15 | 2007-10-19 | 2 | 25d | 0d |  | Mayo; WFU; CTEP; DCP | 160h |
| 13 | 1.2.2.2 | Set timeframe and logistics for parallel test |  | 5d | 2007-10-22 | 2007-10-26 | 12 | 25d | 0d |  | Mayo; WFU; CTEP; DCP | 160h |
| 14 | 1.2.2.3 | Set start date for pilot/parallel testing |  | 1d | 2007-10-29 | 2007-10-29 | 13 | 25d | 0d |  | Mayo; WFU; CTEP; DCP | 32h |
| 15 | 1.2.2.4 | Finalize Plans for Pilot/Parallel Testing Phase | milestone | 0d | 2007-10-29 | 2007-10-29 | 12, 13, 14 | 25d |  |  |  |  |
| 16 | 1.3 | **Training** |  | 2d | 2007-10-15 | 2007-10-16 |  | 31d |  |  |  | 32h |
| 17 | 1.3.1 | Prepare for Training Session |  | 1d | 2007-10-15 | 2007-10-15 | 2 | 31d | 0d |  |  |  |
| 18 | 1.3.2 | Training Session on caAERS for UAT |  | 1d | 2007-10-16 | 2007-10-16 | 17 | 31d | 0d |  | caAERS Developers; Mayo; WFU; NCI | 32h |
| 19 | 1.4 | **User Acceptance Testing (UAT)** |  | 20d | 2007-10-15 | 2007-11-09 |  | 0d |  |  |  | 432h |
| 20 | 1.4.1 | Deploy Iteration 7 Build (Release Candidate 1) |  | 1d | 2007-10-15 | 2007-10-15 | 2 | 0d |  |  | caAERS Developers; Mayo; WFU | 24h |
| 21 | 1.4.2 | **UAT - Round 1** |  | 3d | 2007-10-17 | 2007-10-19 |  | 0d |  |  |  | 72h |
| 22 | 1.4.2.1 | Adopter Testing |  | 3d | 2007-10-17 | 2007-10-19 | 20, 18 | 31d |  |  | Mayo; WFU | 48h |
| 23 | 1.4.2.2 | Developer Fixes |  | 3d | 2007-10-17 | 2007-10-19 | 20FS+1d | 0d |  |  | caAERS Developers | 24h |
| 24 | 1.4.3 | **UAT - Round 2** |  | 5d | 2007-10-22 | 2007-10-26 | 23 | 0d |  |  |  | 112h |
| 25 | 1.4.3.1 | Deploy Build with Updates (RC2) |  | 1d | 2007-10-22 | 2007-10-22 | 23 | 0d |  |  | caAERS Developers; Mayo; WFU | 24h |
| 26 | 1.4.3.2 | Adopter Testing |  | 4d | 2007-10-23 | 2007-10-26 | 25 | 26d |  |  | Mayo; WFU | 64h |
| 27 | 1.4.3.3 | Developer Fixes and Guide Updates |  | 3d | 2007-10-24 | 2007-10-26 | 25FS+1d | 0d |  |  | caAERS Developers | 24h |

| ID | WBS | Task | Type | Duration | Start | Finish | Predecessors | Total slack | Resources | Work |
| --- | --- | --- | --- | --- | --- | --- | --- | --- | --- | --- |
| 28 | 1.4.4 | **UAT - Round 3 (prob first time we'd open to some add'l users)** |  | 5d | 2007-10-29 | 2007-11-02 |  | 0d |  | 112h |
| 29 | 1.4.4.1 | Deploy Build with Updates (RC3) |  | 1d | 2007-10-29 | 2007-10-29 | 27 | 0d | caAERS Developers; Mayo; WFU | 24h |
| 30 | 1.4.4.2 | Adopter Testing |  | 4d | 2007-10-30 | 2007-11-02 | 29 | 21d | Mayo; WFU | 64h |
| 31 | 1.4.4.3 | Developer Fixes and Guide Updates |  | 3d | 2007-10-31 | 2007-11-02 | 29FS+1d | 0d | caAERS Developers | 24h |
| 32 | 1.4.5 | **UAT - Round 4** |  | 5d | 2007-11-05 | 2007-11-09 |  | 0d |  | 112h |
| 33 | 1.4.5.1 | Deploy Build with Updates (RC4) |  | 1d | 2007-11-05 | 2007-11-05 | 31 | 0d | caAERS Developers; Mayo; WFU | 24h |
| 34 | 1.4.5.2 | Adopter Testing |  | 4d | 2007-11-06 | 2007-11-09 | 33 | 16d | Mayo; WFU | 64h |
| 35 | 1.4.5.3 | Developer Fixes |  | 3d | 2007-11-07 | 2007-11-09 | 33FS+1d | 0d | caAERS Developers | 24h |
| 36 | 1.4.5.4 | User Acceptance | milestone | 0d | 2007-11-09 | 2007-11-09 | 35 | 0d | Mayo; WFU; NCICB |  |
| 37 | 1.4.5.5 | Submit Code Release Updates (Task 4.3) | milestone | 0d | 2007-11-09 | 2007-11-09 | 35 | 16d | caAERS Developers |  |
| 38 | 1.4.5.6 | Submit Guide Updates (Task 4.4) | milestone | 0d | 2007-11-09 | 2007-11-09 | 35 | 16d | caAERS Developers |  |
| 39 | 1.5 | **Deployment** |  | 13d | 2007-11-12 | 2007-11-28 |  | 0d |  | 312h |
| 40 | 1.5.1 | Final Deployment at Adopters |  | 1d | 2007-11-12 | 2007-11-12 | 36, 10 | 0d | caAERS Developers; Mayo; WFU | 24h |
| 41 | 1.5.2 | Configuration |  | 10d | 2007-11-13 | 2007-11-26 | 40 | 0d | caAERS Developers; Mayo; WFU | 240h |
| 42 | 1.5.3 | Sign Off | milestone | 0d | 2007-11-26 | 2007-11-26 | 41 | 0d | Mayo; WFU |  |
| 43 | 1.5.4 | Deployment Report (Task 4.2) |  | 2d | 2007-11-27 | 2007-11-28 | 42 | 0d | caAERS Developers; Mayo; WFU | 48h |
| 44 | 2 | **Project Closing Activities** |  | 3d | 2007-11-29 | 2007-12-03 | 43 | 0d |  |  |
| 45 | 2.1 | Lessons Learned (Task 1.6) |  | 1d | 2007-11-29 | 2007-11-29 |  | 2d |  |  |
| 46 | 2.2 | Archiving |  | 2d | 2007-11-29 | 2007-11-30 |  | 1d |  |  |
| 47 | 2.3 | Contract Closeout |  | 3d | 2007-11-29 | 2007-12-03 |  | 0d |  |  |
